# COFECON_GESTOR_WEB

Schedule from MS Project, 2020-01-01 to 2020-12-22, costs in $.

## Calendars

- Standard: Mon-Fri 08:00-12:00, 13:00-17:00; Sat-Sun off.

## Resources

| Resource | Rate | Cost per use |
| --- | --- | --- |
| Web Designer | 20 |  |
| Desenvolvedor Sênior Java | 53.12 |  |
| Administrador de Banco de Dados | 43.75 |  |
| Testador de Software | 20 |  |
| Scrum Master | 43.75 |  |
| Desenvolvedor Júnior Java | 25 |  |
| Desenvolvedor Front End | 25 |  |
| Desenvolvedor PWA | 28.12 |  |
| Gerente de Projetos | 125 |  |
| Especialista em Redes e Infraestrutura | 31.25 |  |
| Consultor de Suporte Técnico | 20 |  |
| Especialista em Migração de Dados | 31.25 |  |
| Computador Desktop | 3000 |  |
| Passagem aérea |  |  |
| Provedor de Internet | 300 | 300 |
| Especialista em Compras | 25 |  |
| Gastos Gerais |  |  |
| Licença de SGBD (Enterprise) |  |  |

## Schedule

| ID | WBS | Task | Duration | Start | Finish | Predecessors | Total slack | Free slack | Resources | Work | Cost |
| --- | --- | --- | --- | --- | --- | --- | --- | --- | --- | --- | --- |
| 1 | 1 | **COFECON Gestor Web** | 255d | 2020-01-01 | 2020-12-22 |  |  |  | Gerente de Projetos | 14449.3h | 891,914.08 |
| 2 | 1.1 | **Fase de Modelagem** | 17d | 2020-01-01 | 2020-01-23 |  | 40.25d | 0d |  | 404h | 57,480 |
| 3 | 1.1.1 | **Design de interfaces** | 16d | 2020-01-01 | 2020-01-22 |  | 41.25d |  |  | 224h | 4,480 |
| 4 | 1.1.1.1 | **Geral** | 3d | 2020-01-01 | 2020-01-03 |  | 48.25d | 0d |  | 32h | 640 |
| 5 | 1.1.1.1.1 | Layout tela Home | 2d | 2020-01-01 | 2020-01-02 |  | 48.25d | 0d | Web Designer | 16h | 320 |
| 6 | 1.1.1.1.2 | Layout Menu | 1d | 2020-01-03 | 2020-01-03 | 5 | 48.25d |  | Web Designer | 8h | 160 |
| 7 | 1.1.1.1.3 | Layout rodapé | 1d | 2020-01-03 | 2020-01-03 | 5 | 48.25d |  | Web Designer | 8h | 160 |
| 8 | 1.1.1.2 | **Sistema Cadastral** | 4d | 2020-01-06 | 2020-01-09 | 4 | 46.25d | 0d |  | 48h | 960 |
| 9 | 1.1.1.2.1 | **Pessoa Física** | 1d | 2020-01-09 | 2020-01-09 |  | 46.25d |  |  | 16h | 320 |
| 10 | 1.1.1.2.1.1 | Layout tela consulta PF | 1d | 2020-01-09 | 2020-01-09 |  | 46.25d |  | Web Designer | 8h | 160 |
| 11 | 1.1.1.2.1.2 | Layout tela cadastro PF | 1d | 2020-01-09 | 2020-01-09 |  | 46.25d |  | Web Designer | 8h | 160 |
| 12 | 1.1.1.2.2 | **Pessoa Jurídica** | 2d | 2020-01-06 | 2020-01-07 |  | 48.25d |  |  | 32h | 640 |
| 13 | 1.1.1.2.2.1 | Layout tela cadastro PJ | 1d | 2020-01-06 | 2020-01-06 |  | 48.25d | 0d | Web Designer | 8h | 160 |
| 14 | 1.1.1.2.2.2 | Layout tela consulta PJ | 1d | 2020-01-06 | 2020-01-06 |  | 48.25d | 0d | Web Designer | 8h | 160 |
| 15 | 1.1.1.2.2.3 | Layout tela para manter sócios | 1d | 2020-01-07 | 2020-01-07 | 13, 14 | 48.25d |  | Web Designer | 8h | 160 |
| 16 | 1.1.1.2.2.4 | Layout tela cadastro usuario de controle PJ | 1d | 2020-01-07 | 2020-01-07 | 13, 14 | 48.25d |  | Web Designer | 8h | 160 |
| 17 | 1.1.1.3 | **Sistema Financeiro** | 4d | 2020-01-10 | 2020-01-15 | 8 | 44.25d | 0d |  | 64h | 1,280 |
| 18 | 1.1.1.3.1 | **A Receber** | 2d | 2020-01-10 | 2020-01-13 |  | 45.25d | 0d |  | 32h | 640 |
| 19 | 1.1.1.3.1.1 | Layout tela de renegociação de dívida | 1d | 2020-01-10 | 2020-01-10 |  | 46.25d |  | Web Designer | 8h | 160 |
| 20 | 1.1.1.3.1.2 | Layout para realizar filtros nas consultas | 1d | 2020-01-10 | 2020-01-10 |  | 46.25d |  | Web Designer | 8h | 160 |
| 21 | 1.1.1.3.1.3 | Layout para carregamento de arquivos | 1d | 2020-01-13 | 2020-01-13 |  | 45.25d |  | Web Designer | 8h | 160 |
| 22 | 1.1.1.3.1.4 | Layout de controle de parcelas | 1d | 2020-01-13 | 2020-01-13 |  | 45.25d |  | Web Designer | 8h | 160 |
| 23 | 1.1.1.3.2 | **Dívida Átiva** | 2d | 2020-01-14 | 2020-01-15 | 18 | 44.25d |  |  | 32h | 640 |
| 24 | 1.1.1.3.2.1 | Layout para lançamento de débitos | 1d | 2020-01-14 | 2020-01-14 |  | 45.25d |  | Web Designer | 8h | 160 |
| 25 | 1.1.1.3.2.2 | Layout para consulta de débitos ativos | 1d | 2020-01-14 | 2020-01-14 |  | 45.25d |  | Web Designer | 8h | 160 |
| 26 | 1.1.1.3.2.3 | layout para personalizar modelos de emissão de documentos | 1d | 2020-01-15 | 2020-01-15 |  | 44.25d |  | Web Designer | 8h | 160 |
| 27 | 1.1.1.3.2.4 | Layout para renegociação de débitos lançados em dívida ativas | 1d | 2020-01-15 | 2020-01-15 |  | 44.25d |  | Web Designer | 8h | 160 |

| ID | WBS | Task | Duration | Start | Finish | Predecessors | Total slack | Free slack | Resources | Work | Cost |
| --- | --- | --- | --- | --- | --- | --- | --- | --- | --- | --- | --- |
| 28 | 1.1.1.4 | **Sistema Fiscal** | 3d | 2020-01-16 | 2020-01-20 | 17 | 42.25d | 0d |  | 48h | 960 |
| 29 | 1.1.1.4.1 | Layout para manter cadastro de situação da fiscalização | 1d | 2020-01-16 | 2020-01-16 |  | 44.25d |  | Web Designer | 8h | 160 |
| 30 | 1.1.1.4.2 | Layout para manter cadastro de situação de itens fiscalizados | 1d | 2020-01-16 | 2020-01-16 |  | 44.25d |  | Web Designer | 8h | 160 |
| 31 | 1.1.1.4.3 | Layout para acompanhamento de fases da fiscalização | 1d | 2020-01-17 | 2020-01-17 |  | 43.25d |  | Web Designer | 8h | 160 |
| 32 | 1.1.1.4.4 | Layout para controle de fiscalização | 1d | 2020-01-17 | 2020-01-17 |  | 43.25d |  | Web Designer | 8h | 160 |
| 33 | 1.1.1.4.5 | Layout para emitir formulários e documentos no local da fiscalização | 1d | 2020-01-20 | 2020-01-20 |  | 42.25d |  | Web Designer | 8h | 160 |
| 34 | 1.1.1.4.6 | Layout para inserir registro da fiscalização no local | 1d | 2020-01-20 | 2020-01-20 |  | 42.25d |  | Web Designer | 8h | 160 |
| 35 | 1.1.1.5 | **Serviços online PF/PJ** | 2d | 2020-01-21 | 2020-01-22 | 28 | 41.25d |  |  | 32h | 640 |
| 36 | 1.1.1.5.1 | Layout para solicitar acesso ao sistema | 1d | 2020-01-21 | 2020-01-21 |  | 42.25d |  | Web Designer | 8h | 160 |
| 37 | 1.1.1.5.2 | Layout para recuperação de senha | 1d | 2020-01-21 | 2020-01-21 |  | 42.25d |  | Web Designer | 8h | 160 |
| 38 | 1.1.1.5.3 | Layout para realizar login no sistema | 1d | 2020-01-22 | 2020-01-22 |  | 41.25d |  | Web Designer | 8h | 160 |
| 39 | 1.1.1.5.4 | Layout para realização de consultas da situação financeira | 1d | 2020-01-22 | 2020-01-22 |  | 41.25d |  | Web Designer | 8h | 160 |
| 40 | 1.1.2 | **Banco de dados** | 9.5d | 2020-01-01 | 2020-01-14 |  | 41.75d | 0d |  | 68h | 49,975 |
| 41 | 1.1.2.1 | **Geral** | 3d | 2020-01-01 | 2020-01-03 |  | 44.75d | 0d |  | 24h | 48,050 |
| 42 | 1.1.2.1.1 | Escolha de SGBD | 1d | 2020-01-01 | 2020-01-01 |  | 44.75d | 0d | Administrador de Banco de Dados; Licença de SGBD (Enterprise) [0.1%] | 8h | 47,350 |
| 43 | 1.1.2.1.2 | Modelar Diagrama Entidade Relacionamento | 2d | 2020-01-02 | 2020-01-03 | 42 | 44.75d |  | Administrador de Banco de Dados | 16h | 700 |
| 44 | 1.1.2.2 | **Criar Tabelas** | 6.5d | 2020-01-06 | 2020-01-14 | 41 | 41.75d |  |  | 44h | 1,925 |
| 45 | 1.1.2.2.1 | Pessoa Física | 4h | 2020-01-13 | 2020-01-13 |  | 41.75d | 0d | Administrador de Banco de Dados | 4h | 175 |
| 46 | 1.1.2.2.2 | Pessoa Jurídica | 4h | 2020-01-07 | 2020-01-07 |  | 45.25d | 3.5d | Administrador de Banco de Dados | 4h | 175 |
| 47 | 1.1.2.2.3 | Débitos | 4h | 2020-01-07 | 2020-01-07 |  | 45.75d | 4d | Administrador de Banco de Dados | 4h | 175 |
| 48 | 1.1.2.2.10 | Fornecedor | 4h | 2020-01-06 | 2020-01-06 |  | 46.75d | 5d | Administrador de Banco de Dados | 4h | 175 |
| 49 | 1.1.2.2.4 | Fiscalizações | 4h | 2020-01-06 | 2020-01-08 |  | 44.25d | 2.5d | Administrador de Banco de Dados | 4h | 175 |
| 50 | 1.1.2.2.5 | Perfis | 4h | 2020-01-06 | 2020-01-06 |  | 46.25d | 4.5d | Administrador de Banco de Dados | 4h | 175 |
| 51 | 1.1.2.2.6 | Status | 4h | 2020-01-10 | 2020-01-10 |  | 42.75d | 1d | Administrador de Banco de Dados | 4h | 175 |
| 52 | 1.1.2.2.7 | Itens(fiscalizados) | 4h | 2020-01-13 | 2020-01-13 |  | 41.75d | 0d | Administrador de Banco de Dados | 4h | 175 |
| 53 | 1.1.2.2.8 | Fiscal | 4h | 2020-01-13 | 2020-01-13 |  | 41.75d | 0d | Administrador de Banco de Dados | 4h | 175 |
| 54 | 1.1.2.2.9 | Criar relacionamentos necessários | 8h | 2020-01-13 | 2020-01-14 | 45, 46, 47, 48, 49, 50, 51, 52, 53 | 41.75d |  | Administrador de Banco de Dados | 8h | 350 |

| ID | WBS | Task | Duration | Start | Finish | Predecessors | Total slack | Free slack | Constraint | Resources | Work | Cost |
| --- | --- | --- | --- | --- | --- | --- | --- | --- | --- | --- | --- | --- |
| 55 | 1.1.3 | **Java** | 7.5d | 2020-01-14 | 2020-01-23 | 40 | 40.25d | 0d |  |  | 112h | 3,025 |
| 56 | 1.1.3.1 | **Classes** | 4d | 2020-01-14 | 2020-01-20 |  | 41.75d | 0d |  |  | 32h | 1,025 |
| 57 | 1.1.3.1.1 | Criar diagrama de classes UML | 1d | 2020-01-14 | 2020-01-15 |  | 41.75d | 0d |  | Desenvolvedor Sênior Java | 8h | 425 |
| 58 | 1.1.3.1.2 | Criar classe para cada entidade do banco de dados | 3d | 2020-01-15 | 2020-01-20 | 57 | 41.75d |  |  | Desenvolvedor Júnior Java | 24h | 600 |
| 59 | 1.1.3.2 | **Criar anotações no Hibernate** | 3.5d | 2020-01-20 | 2020-01-23 | 56 | 40.25d |  |  |  | 80h | 2,000 |
| 60 | 1.1.3.2.1 | Pessoa Física | 1d | 2020-01-20 | 2020-01-21 |  | 42.75d |  |  | Desenvolvedor Júnior Java | 8h | 200 |
| 61 | 1.1.3.2.2 | Pessoa Jurídica | 1d | 2020-01-20 | 2020-01-21 |  | 42.75d |  |  | Desenvolvedor Júnior Java | 8h | 200 |
| 62 | 1.1.3.2.3 | Débitos | 1d | 2020-01-20 | 2020-01-21 |  | 42.75d |  |  | Desenvolvedor Júnior Java | 8h | 200 |
| 63 | 1.1.3.2.4 | Fiscalizações | 1d | 2020-01-20 | 2020-01-21 |  | 42.75d |  |  | Desenvolvedor Júnior Java | 8h | 200 |
| 64 | 1.1.3.2.5 | Perfis | 1d | 2020-01-20 | 2020-01-21 |  | 42.75d |  |  | Desenvolvedor Júnior Java | 8h | 200 |
| 65 | 1.1.3.2.6 | Status | 1d | 2020-01-21 | 2020-01-22 |  | 41.75d |  |  | Desenvolvedor Júnior Java | 8h | 200 |
| 66 | 1.1.3.2.7 | Itens(fiscalizados) | 1d | 2020-01-22 | 2020-01-22 |  | 40.25d | 0d | finish no earlier than 2020-01-22 | Desenvolvedor Júnior Java | 8h | 200 |
| 67 | 1.1.3.2.8 | Fiscal | 1d | 2020-01-22 | 2020-01-22 |  | 40.25d | 0d | finish no earlier than 2020-01-22 | Desenvolvedor Júnior Java | 8h | 200 |
| 68 | 1.1.3.2.9 | Fornecedor | 1d | 2020-01-23 | 2020-01-23 | 66 | 47.25d |  |  | Desenvolvedor Júnior Java | 8h | 200 |
| 69 | 1.1.3.2.10 | Mapear relacionamentos e tabelas intermediárias | 1d | 2020-01-23 | 2020-01-23 | 67 | 47.25d |  |  | Desenvolvedor Júnior Java | 8h | 200 |
| 70 | 1.2 | **Fase de Implementação** | 132d | 2020-01-24 | 2020-07-27 | 2 | 19d | 0d |  | Scrum Master | 5369.33h | 168,489.08 |
| 71 | 1.2.1 | **Sistema Geral** | 7d | 2020-01-24 | 2020-02-03 | 2 | 36.75d | 0d |  |  | 120h | 4,482.5 |
| 72 | 1.2.1.1 | Criar ferramenta para geração de relatórios em formato pdf, csv e html | 3.5d | 2020-01-24 | 2020-01-29 |  | 47.25d |  |  | Desenvolvedor Sênior Java; Testador de Software | 56h | 2,047.5 |
| 73 | 1.2.1.2 | Criar ferramenta para backup e restauração | 1d | 2020-02-03 | 2020-02-03 |  | 43.75d |  |  | Desenvolvedor Sênior Java; Administrador de Banco de Dados; Testador de Software | 24h | 935 |
| 74 | 1.2.1.3 | Prover replicação do banco de dados | 2.5d | 2020-01-24 | 2020-01-28 |  | 48.25d |  |  | Administrador de Banco de Dados; Especialista em Migração de Dados | 40h | 1,500 |
| 75 | 1.2.2 | **Sistema Cadastral** | 13.5d | 2020-02-04 | 2020-02-21 | 71 | 36.75d | 0d |  |  | 532h | 14,553.33 |
| 76 | 1.2.2.1 | **Pessoa física** | 5.67d | 2020-02-04 | 2020-02-11 |  | 44.58d |  |  |  | 212h | 5,708.33 |
| 77 | 1.2.2.1.1 | **Manter dados básicos** | 3.67d | 2020-02-04 | 2020-02-07 |  | 44.58d | 0d |  |  | 108h | 2,553.33 |
| 78 | 1.2.2.1.1.1 | Implementar interface de cadastro | 1d | 2020-02-04 | 2020-02-04 |  | 51.58d | 0d |  | Desenvolvedor Front End [200%] | 16h | 400 |
| 79 | 1.2.2.1.1.2 | Validar campos do formulário | 1.33d | 2020-02-05 | 2020-02-06 | 78 | 51.58d | 0d |  | Desenvolvedor Front End; Desenvolvedor Júnior Java; Testador de Software | 32h | 746.67 |
| 80 | 1.2.2.1.1.3 | Buscar dados de orgãos públicos | 1.33d | 2020-02-06 | 2020-02-07 | 79 | 51.58d |  |  | Desenvolvedor Júnior Java [200%]; Testador de Software | 32h | 746.67 |
| 81 | 1.2.2.1.1.4 | Persistir informações no banco de dados | 0.5d | 2020-02-04 | 2020-02-04 |  | 53.75d | 0d |  | Desenvolvedor Júnior Java; Testador de Software | 8h | 180 |
| 82 | 1.2.2.1.1.5 | Informar usuário retorno da operação | 1d | 2020-02-04 | 2020-02-05 | 81 | 53.75d |  |  | Desenvolvedor Júnior Java; Desenvolvedor Front End; Testador de Software | 20h | 480 |

| ID | WBS | Task | Duration | Start | Finish | Predecessors | Total slack | Free slack | Resources | Work | Cost |
| --- | --- | --- | --- | --- | --- | --- | --- | --- | --- | --- | --- |
| 83 | 1.2.2.1.2 | **Manter Histórico profissional** | 2d | 2020-02-07 | 2020-02-11 | 77 | 44.58d |  |  | 72h | 1,720 |
| 84 | 1.2.2.1.2.1 | Implementar layout consulta PF | 1d | 2020-02-07 | 2020-02-10 |  | 51.58d | 0d | Desenvolvedor Front End | 8h | 200 |
| 85 | 1.2.2.1.2.2 | Buscar profissional por nome, CPF ou CRE | 1d | 2020-02-07 | 2020-02-10 |  | 52.58d |  | Desenvolvedor Júnior Java; Testador de Software | 12h | 280 |
| 86 | 1.2.2.1.2.3 | Listar todas as atualizações/ocorrências do profissional | 1d | 2020-02-10 | 2020-02-11 | 84 | 51.58d |  | Desenvolvedor Front End; Testador de Software | 12h | 280 |
| 87 | 1.2.2.1.2.4 | Permitir inserção de novas atualizações/ocorrências | 1d | 2020-02-07 | 2020-02-10 |  | 51.58d | 0d | Desenvolvedor Front End; Desenvolvedor Júnior Java; Testador de Software | 20h | 480 |
| 88 | 1.2.2.1.2.5 | Permitir edição de atualizações/ocorrências | 1d | 2020-02-10 | 2020-02-11 | 87 | 51.58d |  | Desenvolvedor Júnior Java [200%]; Desenvolvedor Front End; Testador de Software | 20h | 480 |
| 89 | 1.2.2.1.3 | **Garantir aprovação eletrônica dos registros** | 3d | 2020-02-04 | 2020-02-06 |  | 47.25d |  |  | 32h | 1,435 |
| 90 | 1.2.2.1.3.1 | Assinar documentos com certificado digital de representante legal | 3d | 2020-02-04 | 2020-02-06 |  | 54.25d |  | Desenvolvedor Sênior Java; Testador de Software | 32h | 1,435 |
| 91 | 1.2.2.2 | **Pessoa jurídica** | 13.5d | 2020-02-04 | 2020-02-21 |  | 36.75d |  |  | 320h | 8,845 |
| 92 | 1.2.2.2.1 | **Manter Dados básicos** | 6d | 2020-02-04 | 2020-02-11 |  | 36.75d | 0d |  | 84h | 2,040 |
| 93 | 1.2.2.2.1.1 | Implementar layout de interface | 1d | 2020-02-04 | 2020-02-04 |  | 43.75d | 0d | Desenvolvedor Front End | 8h | 200 |
| 94 | 1.2.2.2.1.2 | Validar campos do formulário | 2d | 2020-02-05 | 2020-02-06 | 93 | 43.75d | 0d | Desenvolvedor Front End; Desenvolvedor Júnior Java [200%]; Testador de Software | 28h | 680 |
| 95 | 1.2.2.2.1.3 | Possibilitar criação, edição e remoção dos dados informados | 2d | 2020-02-07 | 2020-02-10 | 94 | 43.75d | 0d | Desenvolvedor Front End; Desenvolvedor Júnior Java; Testador de Software | 36h | 880 |
| 96 | 1.2.2.2.1.4 | Persistir informações no banco de dados | 1d | 2020-02-11 | 2020-02-11 | 95 | 43.75d |  | Desenvolvedor Júnior Java; Testador de Software | 12h | 280 |
| 97 | 1.2.2.2.2 | **Manter histórico da empresa** | 4.5d | 2020-02-12 | 2020-02-18 | 92 | 36.75d | 0d |  | 52h | 1,240 |
| 98 | 1.2.2.2.2.1 | Implementar layout de tela de consulta | 1d | 2020-02-12 | 2020-02-12 |  | 43.75d | 0d | Desenvolvedor Front End | 8h | 200 |
| 99 | 1.2.2.2.2.2 | Buscar empresa por nome, CNPJ | 1d | 2020-02-13 | 2020-02-13 | 98 | 43.75d | 0d | Desenvolvedor Júnior Java; Testador de Software | 12h | 280 |
| 100 | 1.2.2.2.2.3 | Editar e inserir novas atualizações da empresa | 1d | 2020-02-14 | 2020-02-17 | 99 | 43.75d | 0d | Desenvolvedor Júnior Java; Desenvolvedor Front End; Testador de Software | 12h | 280 |
| 101 | 1.2.2.2.2.4 | Listar atualizações, ocorrências e situação da empresa | 1d | 2020-02-17 | 2020-02-18 | 100 | 43.75d |  | Desenvolvedor Front End; Desenvolvedor Júnior Java; Testador de Software | 20h | 480 |
| 102 | 1.2.2.2.3 | **Manter sócios da empresa** | 3d | 2020-02-18 | 2020-02-21 | 97 | 36.75d |  |  | 64h | 1,560 |
| 103 | 1.2.2.2.3.1 | Implementar layout de tela para manter sócios | 1d | 2020-02-18 | 2020-02-19 |  | 43.75d | 0d | Desenvolvedor Front End | 8h | 200 |
| 104 | 1.2.2.2.3.2 | Listar sócios e participação societaria na empresa | 1d | 2020-02-19 | 2020-02-20 | 103 | 43.75d | 0d | Desenvolvedor Front End; Desenvolvedor Júnior Java; Testador de Software | 20h | 480 |
| 105 | 1.2.2.2.3.3 | Permitir, inserir, alterar e remover sócios à empresas | 1d | 2020-02-20 | 2020-02-21 | 104 | 43.75d |  | Desenvolvedor Front End [200%]; Desenvolvedor Júnior Java [200%]; Testador de Software | 36h | 880 |
| 106 | 1.2.2.2.4 | **Controle de inscrições ativas** | 2d | 2020-02-12 | 2020-02-13 |  | 42.25d |  |  | 24h | 1,010 |
| 107 | 1.2.2.2.4.1 | Garantir autenticidade e integridade em um só cadastro de empresa | 2d | 2020-02-12 | 2020-02-13 | 92 | 49.25d |  | Desenvolvedor Sênior Java; Testador de Software | 24h | 1,010 |

| ID | WBS | Task | Duration | Start | Finish | Predecessors | Total slack | Free slack | Resources | Work | Cost |
| --- | --- | --- | --- | --- | --- | --- | --- | --- | --- | --- | --- |
| 108 | 1.2.2.2.5 | **Controle via aprovação de usuário** | 5.5d | 2020-02-12 | 2020-02-19 | 92 | 38.75d |  |  | 68h | 1,640 |
| 109 | 1.2.2.2.5.1 | Implementar layout de criação de usuário de controle PJ | 1d | 2020-02-12 | 2020-02-12 |  | 45.75d | 0d | Desenvolvedor Front End | 8h | 200 |
| 110 | 1.2.2.2.5.2 | Criar perfil de usuário com permissões específicas | 2d | 2020-02-14 | 2020-02-17 | 109 | 45.75d | 0d | Desenvolvedor Júnior Java; Testador de Software | 20h | 480 |
| 111 | 1.2.2.2.5.3 | Limitar ações do usuário de acordo com suas permissões | 1.5d | 2020-02-18 | 2020-02-19 | 110 | 45.75d |  | Desenvolvedor Júnior Java [200%]; Testador de Software | 28h | 680 |
| 112 | 1.2.2.2.5.4 | Persistir ações no banco de dados | 1d | 2020-02-14 | 2020-02-17 | 109 | 47.75d |  | Desenvolvedor Júnior Java; Testador de Software | 12h | 280 |
| 113 | 1.2.2.2.6 | **Garantir aprovação eletrônica dos registros** | 3d | 2020-02-14 | 2020-02-18 |  | 39.25d |  |  | 28h | 1,355 |
| 114 | 1.2.2.2.6.1 | Assinar documentos com certificado digital de representante legal | 3d | 2020-02-14 | 2020-02-18 | 92 | 46.25d |  | Desenvolvedor Sênior Java; Testador de Software | 28h | 1,355 |
| 115 | 1.2.3 | **Sistema Financeiro** | 42.5d | 2020-02-21 | 2020-04-21 | 75 | 26.5d | 0d |  | 1806.66h | 49,741.58 |
| 116 | 1.2.3.1 | **A receber** | 32.5d | 2020-02-21 | 2020-04-07 |  | 36.5d |  |  | 1226.66h | 34,436.58 |
| 117 | 1.2.3.1.1 | **Configuração de débito** | 13d | 2020-02-21 | 2020-03-11 |  | 36.75d | 0d |  | 362.67h | 10,781.58 |
| 118 | 1.2.3.1.1.1 | Restringir acesso apenas para usuários com permissões | 2d | 2020-02-21 | 2020-02-25 |  | 54.75d |  | Desenvolvedor Sênior Java; Testador de Software | 20h | 930 |
| 119 | 1.2.3.1.1.2 | Implementar layout de interface | 1d | 2020-02-24 | 2020-02-28 |  | 51.75d |  | Desenvolvedor Front End | 8h | 200 |
| 120 | 1.2.3.1.1.3 | Permitir criar, editar e dar baixa em débitos | 3d | 2020-02-21 | 2020-02-26 |  | 43.75d | 0d | Desenvolvedor Front End; Desenvolvedor Júnior Java; Testador de Software | 52h | 1,280 |
| 121 | 1.2.3.1.1.4 | Validar informações vindas do formulário | 1d | 2020-02-26 | 2020-02-27 | 120 | 43.75d | 0d | Desenvolvedor Front End [200%]; Desenvolvedor Júnior Java [200%]; Testador de Software | 36h | 880 |
| 122 | 1.2.3.1.1.5 | Persistir operação no banco de dados | 1d | 2020-02-27 | 2020-02-28 | 121 | 43.75d | 0d | Desenvolvedor Júnior Java [200%]; Testador de Software | 20h | 480 |
| 123 | 1.2.3.1.1.6 | Informar status da operação ao usuário | 1d | 2020-02-28 | 2020-03-02 | 122 | 47.75d | 0d | Desenvolvedor Front End [200%]; Desenvolvedor Júnior Java [200%]; Testador de Software | 36h | 880 |
| 124 | 1.2.3.1.1.7 | Listar débitos e permitir a seleção de específicos para realizar processamento em comum | 1.5d | 2020-03-02 | 2020-03-03 | 123 | 47.75d | 0d | Desenvolvedor Front End [200%]; Desenvolvedor Júnior Java [200%]; Testador de Software | 52h | 1,280 |
| 125 | 1.2.3.1.1.8 | Atualizar e corrigir o valor do débito de acordo com os índices da SELIC, INPC e IGPM bem como das multas e juros | 1.5d | 2020-03-04 | 2020-03-05 | 124 | 47.75d |  | Desenvolvedor Sênior Java [200%]; Testador de Software | 28h | 1,355 |
| 126 | 1.2.3.1.1.9 | Integrar aplicação com sistemas de bancos para efetuar baixas automáticas de pagamentos efetuados | 5d | 2020-02-28 | 2020-03-11 | 122 | 43.75d |  | Desenvolvedor Sênior Java [300%]; Desenvolvedor Júnior Java [200%]; Testador de Software | 110.67h | 3,496.58 |
| 127 | 1.2.3.1.2 | **Renegociação de dívidas** | 7.25d | 2020-03-11 | 2020-03-20 | 117 | 36.75d | 0d |  | 176h | 4,300 |
| 128 | 1.2.3.1.2.1 | Restringir acesso apenas para usuários com permissões | 2d | 2020-03-11 | 2020-03-13 |  | 49d |  | Desenvolvedor Júnior Java; Testador de Software | 20h | 480 |
| 129 | 1.2.3.1.2.2 | Implementar layout tela renegociação de dívida | 1.25d | 2020-03-11 | 2020-03-12 |  | 43.75d | 0d | Desenvolvedor Front End [200%] | 20h | 500 |
| 130 | 1.2.3.1.2.3 | Validar campos do formulário | 1d | 2020-03-12 | 2020-03-13 | 129 | 43.75d | 0d | Desenvolvedor Front End [200%]; Desenvolvedor Júnior Java [200%]; Testador de Software | 36h | 880 |
| 131 | 1.2.3.1.2.4 | Permitir criar, editar e remover renegociações | 1d | 2020-03-13 | 2020-03-16 | 130 | 43.75d | 0d | Desenvolvedor Júnior Java [200%]; Desenvolvedor Front End [200%]; Testador de Software | 36h | 880 |
| 132 | 1.2.3.1.2.5 | Persistir operações no banco de dados | 1d | 2020-03-16 | 2020-03-17 | 131 | 43.75d | 0d | Desenvolvedor Júnior Java; Testador de Software | 12h | 280 |
| 133 | 1.2.3.1.2.6 | Listar débitos e permitir renegociações em conjunto ou individual com configurações previamente cadastradas | 3d | 2020-03-17 | 2020-03-20 | 132 | 43.75d |  | Desenvolvedor Front End; Desenvolvedor Júnior Java; Testador de Software | 52h | 1,280 |

| ID | WBS | Task | Duration | Start | Finish | Predecessors | Total slack | Free slack | Constraint | Resources | Work | Cost |
| --- | --- | --- | --- | --- | --- | --- | --- | --- | --- | --- | --- | --- |
| 134 | 1.2.3.1.3 | **Realizar consultas** | 7.25d | 2020-03-20 | 2020-03-31 | 127 | 36.5d | 0d |  |  | 312h | 9,480 |
| 135 | 1.2.3.1.3.1 | Implementar layout para realizar filtros nas consultas | 1d | 2020-03-23 | 2020-03-23 |  | 43.5d | 0d |  | Desenvolvedor Front End [200%] | 16h | 400 |
| 136 | 1.2.3.1.3.2 | Buscar e listar inscritos em débitos com o conselho a partir de filtros estabelecidos pelo usuário | 2d | 2020-03-20 | 2020-03-24 |  | 48.75d |  |  | Desenvolvedor Front End [200%]; Desenvolvedor Júnior Java [200%]; Testador de Software | 68h | 1,680 |
| 137 | 1.2.3.1.3.3 | Buscar e listar inscritos adimplentes com o conselho a partir de filtros estabelecidos pelo usuário | 1.5d | 2020-03-24 | 2020-03-25 | 135 | 48d |  |  | Desenvolvedor Front End [200%]; Desenvolvedor Júnior Java [200%]; Testador de Software | 52h | 1,280 |
| 138 | 1.2.3.1.3.4 | Realizar integração com o Sistema Fiscal permitindo consulta de relação de débitos | 2d | 2020-03-24 | 2020-03-25 | 135 | 43.5d | 0d |  | Desenvolvedor Sênior Java [200%]; Testador de Software | 36h | 1,780 |
| 139 | 1.2.3.1.3.5 | Listar histórico de recebimentos por período e outros critérios estabelecidos pelo usuário | 2d | 2020-03-26 | 2020-03-27 | 138 | 43.5d | 0d |  | Desenvolvedor Front End [300%]; Desenvolvedor Júnior Java; Testador de Software | 52h | 1,280 |
| 140 | 1.2.3.1.3.6 | Listagem de devedores de pagamento com base em critérios estabelecidos pelo usuário | 2.75d | 2020-03-20 | 2020-03-27 |  | 43.75d | 0.25d |  | Desenvolvedor Júnior Java [200%]; Desenvolvedor Front End [200%]; Testador de Software | 52h | 1,280 |
| 141 | 1.2.3.1.3.7 | Possibilitar opção para fazer download do resultado da listagem em formato pdf | 2d | 2020-03-30 | 2020-03-31 | 140, 139 | 43.5d |  |  | Desenvolvedor Sênior Java [200%]; Testador de Software | 36h | 1,780 |
| 142 | 1.2.3.1.4 | **Listar conteúdo de arquivos** | 3.83d | 2020-02-21 | 2020-02-27 |  | 65.17d |  |  |  | 68h | 1,680 |
| 143 | 1.2.3.1.4.1 | Implementar layout para carregamento de arquivos | 1d | 2020-02-21 | 2020-02-24 |  | 74.5d |  |  | Desenvolvedor Front End [200%] | 16h | 400 |
| 144 | 1.2.3.1.4.2 | Listar conteúdo dos arquivos gerados e recebidos dos bancos | 2d | 2020-02-21 | 2020-02-27 |  | 72.17d |  |  | Desenvolvedor Júnior Java [300%]; Desenvolvedor Front End [300%]; Testador de Software | 52h | 1,280 |
| 145 | 1.2.3.1.5 | **Estabelecer valores padrões** | 9.5d | 2020-02-28 | 2020-03-12 |  | 55d |  |  |  | 80h | 2,635 |
| 146 | 1.2.3.1.5.1 | Implementar interface para estabelecer valores padroes | 1d | 2020-02-28 | 2020-02-28 |  | 65.5d | 0d |  | Desenvolvedor Front End [200%] | 16h | 400 |
| 147 | 1.2.3.1.5.2 | Validar informações vindas do formulário | 2d | 2020-03-02 | 2020-03-05 | 146 | 65.5d | 3.5d |  | Desenvolvedor Front End [200%]; Desenvolvedor Júnior Java [200%]; Testador de Software | 36h | 880 |
| 148 | 1.2.3.1.5.3 | Definir valores padrões para anuidades, taxas de inscrição e emissão de carteira | 1.5d | 2020-03-11 | 2020-03-12 | 147 | 62d |  | start no earlier than 2020-03-11 | Desenvolvedor Sênior Java [200%]; Testador de Software | 28h | 1,355 |
| 149 | 1.2.3.1.6 | **Controle de parcelas** | 5d | 2020-04-01 | 2020-04-07 | 134 | 36.5d |  |  |  | 228h | 5,560 |
| 150 | 1.2.3.1.6.1 | Implementar layout de controle de parcelas | 1d | 2020-04-01 | 2020-04-01 |  | 43.5d | 0d |  | Desenvolvedor Front End [200%] | 16h | 400 |
| 151 | 1.2.3.1.6.2 | Listar informações sobre o débito | 1d | 2020-04-02 | 2020-04-02 | 150 | 45.5d | 0d |  | Desenvolvedor Front End [200%]; Desenvolvedor Júnior Java [200%]; Testador de Software | 36h | 880 |
| 152 | 1.2.3.1.6.3 | Listar histórico de parcelamentos efetuados | 1d | 2020-04-02 | 2020-04-02 | 150 | 43.5d | 0d |  | Desenvolvedor Front End [200%]; Desenvolvedor Júnior Java [200%]; Testador de Software | 36h | 880 |
| 153 | 1.2.3.1.6.4 | Atualizar débito que está sendo renegociado com parcelamento | 1d | 2020-04-03 | 2020-04-03 | 151 | 45.5d |  |  | Desenvolvedor Front End [300%]; Desenvolvedor Júnior Java [200%]; Testador de Software | 36h | 880 |
| 154 | 1.2.3.1.6.5 | Possibilitar salvamento de boletos bancários com código de barras | 1.5d | 2020-04-03 | 2020-04-06 | 152 | 44d | 0d |  | Desenvolvedor Júnior Java [200%]; Testador de Software | 28h | 680 |
| 155 | 1.2.3.1.6.6 | Listagem de cobranças geradas | 1d | 2020-04-03 | 2020-04-03 | 152 | 43.5d | 0d |  | Desenvolvedor Front End; Desenvolvedor Júnior Java; Testador de Software | 20h | 480 |
| 156 | 1.2.3.1.6.7 | Impressão de segunda via do boleto | 1d | 2020-04-06 | 2020-04-07 | 154 | 44d |  |  | Desenvolvedor Júnior Java; Testador de Software | 12h | 280 |
| 157 | 1.2.3.1.6.8 | Possibilitar efetuar cobranças coletivas selecionando as cobranças de interesse | 2d | 2020-04-06 | 2020-04-07 | 155 | 43.5d |  |  | Desenvolvedor Front End [200%]; Desenvolvedor Júnior Java; Testador de Software | 44h | 1,080 |

| ID | WBS | Task | Duration | Start | Finish | Predecessors | Total slack | Free slack | Resources | Work | Cost |
| --- | --- | --- | --- | --- | --- | --- | --- | --- | --- | --- | --- |
| 158 | 1.2.3.2 | **Execução de débitos-Dividas ativas** | 37.5d | 2020-02-28 | 2020-04-21 |  | 26.5d |  |  | 580h | 15,305 |
| 159 | 1.2.3.2.1 | **Lançamento de débitos** | 7.75d | 2020-02-28 | 2020-03-11 |  | 37.75d | 0d |  | 152h | 3,740 |
| 160 | 1.2.3.2.1.1 | Implementar layout para lançamento de débitos | 1d | 2020-02-28 | 2020-03-02 |  | 44.75d | 0d | Desenvolvedor Front End | 8h | 200 |
| 161 | 1.2.3.2.1.2 | Validar dados do formulário | 1d | 2020-03-02 | 2020-03-03 | 160 | 44.75d | 0d | Desenvolvedor Front End [200%]; Desenvolvedor Júnior Java [200%]; Testador de Software | 36h | 880 |
| 162 | 1.2.3.2.1.3 | Permitir lançar débitos de forma individual ou coletiva para pessoas físicas e jurídicas | 3d | 2020-03-03 | 2020-03-10 | 161 | 44.75d | 0d | Desenvolvedor Júnior Java [300%]; Desenvolvedor Front End [200%]; Testador de Software | 72h | 1,780 |
| 163 | 1.2.3.2.1.4 | Permitir que se desfaça o lançamento em dívida ativa | 1d | 2020-03-10 | 2020-03-11 | 162 | 44.75d |  | Desenvolvedor Front End [200%]; Desenvolvedor Júnior Java [200%]; Testador de Software | 36h | 880 |
| 164 | 1.2.3.2.2 | **Consulta de débitos** | 5.5d | 2020-03-11 | 2020-03-18 | 159 | 37.75d | 0d |  | 96h | 2,585 |
| 165 | 1.2.3.2.2.1 | Implementar layout de consultas de débitos ativos | 1d | 2020-03-11 | 2020-03-12 |  | 44.75d | 0d | Desenvolvedor Front End | 8h | 200 |
| 166 | 1.2.3.2.2.2 | Listar débitos a partir de filtros escolhidos pelo usuário | 1.5d | 2020-03-12 | 2020-03-13 | 165 | 44.75d | 0d | Desenvolvedor Front End [200%]; Desenvolvedor Júnior Java [200%]; Testador de Software | 52h | 1,280 |
| 167 | 1.2.3.2.2.3 | Possibilitar salvar o resultado da consulta em arquivo (relatório) | 3d | 2020-03-13 | 2020-03-18 | 166 | 44.75d |  | Desenvolvedor Sênior Java [300%]; Desenvolvedor Front End; Testador de Software | 36h | 1,105 |
| 168 | 1.2.3.2.3 | **Manter Historico da dívida ativa** | 2d | 2020-03-18 | 2020-03-20 |  | 37.75d | 0d |  | 36h | 1,780 |
| 169 | 1.2.3.2.3.1 | Possibilitar a atualização da dívida ativa | 2d | 2020-03-18 | 2020-03-20 | 164 | 44.75d |  | Desenvolvedor Sênior Java [200%]; Testador de Software | 36h | 1,780 |
| 170 | 1.2.3.2.4 | **Emitir documentos** | 12.25d | 2020-03-20 | 2020-04-07 | 168 | 36.5d |  |  | 176h | 4,280 |
| 171 | 1.2.3.2.4.1 | Possibilitar escolher uma ou mais dívidas ativas para emitir documentos | 1d | 2020-03-20 | 2020-03-31 |  | 44.75d | 0d | Desenvolvedor Front End [200%]; Testador de Software | 20h | 480 |
| 172 | 1.2.3.2.4.2 | Possibilitar a emissão de Aviso/Termo de Lançamento em Dívida Ativa | 2d | 2020-03-31 | 2020-04-02 | 171 | 47.25d |  | Desenvolvedor Front End [200%]; Desenvolvedor Júnior Java; Testador de Software | 44h | 1,080 |
| 173 | 1.2.3.2.4.3 | Possibilitar a Certidão de Dívida Ativa (CDA) | 4d | 2020-03-31 | 2020-04-06 | 171 | 45.25d |  | Desenvolvedor Front End [300%]; Desenvolvedor Júnior Java; Testador de Software | 52h | 1,280 |
| 174 | 1.2.3.2.4.4 | Implementar layout para personalizar modelos de emissão de documentos | 2d | 2020-04-06 | 2020-04-07 |  | 43.5d |  | Desenvolvedor Front End [200%]; Testador de Software | 36h | 880 |
| 175 | 1.2.3.2.4.5 | Gerar livros de dívidas ativas de forma coletiva | 1d | 2020-03-31 | 2020-04-03 | 171 | 44.75d | 0d | Desenvolvedor Front End [300%]; Desenvolvedor Júnior Java; Testador de Software | 12h | 280 |
| 176 | 1.2.3.2.4.6 | Gerar livros de dívidas ativas a partir da lista de débitos | 1d | 2020-04-03 | 2020-04-06 | 175 | 44.75d |  | Desenvolvedor Júnior Java; Testador de Software | 12h | 280 |
| 177 | 1.2.3.2.5 | **Renegociação de divida ativa** | 6d | 2020-04-10 | 2020-04-17 | 168 | 26.5d | 0d |  | 84h | 2,040 |
| 178 | 1.2.3.2.5.1 | Implementar layout para renegociação de débitos lançados em dívida ativa | 1d | 2020-04-10 | 2020-04-10 |  | 33.5d | 0d | Desenvolvedor Front End | 8h | 200 |
| 179 | 1.2.3.2.5.2 | Listar dados referente a débitos ativos a serem negociados | 2d | 2020-04-13 | 2020-04-14 | 178 | 33.5d | 0d | Desenvolvedor Front End [200%]; Desenvolvedor Júnior Java; Testador de Software | 28h | 680 |
| 180 | 1.2.3.2.5.3 | Validar dados do formulário | 1d | 2020-04-15 | 2020-04-15 | 179 | 33.5d | 0d | Desenvolvedor Front End [200%]; Desenvolvedor Júnior Java; Testador de Software | 28h | 680 |
| 181 | 1.2.3.2.5.4 | Persistir dados no banco de dados | 2d | 2020-04-16 | 2020-04-17 | 180 | 33.5d |  | Desenvolvedor Júnior Java; Testador de Software | 20h | 480 |

| ID | WBS | Task | Duration | Start | Finish | Predecessors | Total slack | Free slack | Constraint | Resources | Work | Cost |
| --- | --- | --- | --- | --- | --- | --- | --- | --- | --- | --- | --- | --- |
| 182 | 1.2.3.2.6 | **Controle de dívidas ativas** | 2d | 2020-04-20 | 2020-04-21 |  | 26.5d |  |  |  | 36h | 880 |
| 183 | 1.2.3.2.6.1 | Controlar dívida nas fases administrativa e executiva | 2d | 2020-04-20 | 2020-04-21 | 177 | 33.5d |  |  | Desenvolvedor Júnior Java [200%]; Testador de Software | 36h | 880 |
| 184 | 1.2.4 | **Sistema Fiscal** | 43d | 2020-04-22 | 2020-06-19 | 115 | 22d | 0d |  |  | 1378.67h | 38,536.67 |
| 185 | 1.2.4.1 | **Manter cadastro auxiliar** | 11.33d | 2020-04-22 | 2020-05-07 |  | 25.17d | 0d |  |  | 598.67h | 14,666.67 |
| 186 | 1.2.4.1.1 | **Situação da fiscalização** | 10d | 2020-04-22 | 2020-05-05 |  | 26.5d |  |  |  | 260h | 6,400 |
| 187 | 1.2.4.1.1.1 | Implementar layout para manter cadastro de situação da fiscalização | 1d | 2020-04-22 | 2020-04-22 |  | 33.5d | 0d |  | Desenvolvedor Front End [200%] | 16h | 400 |
| 188 | 1.2.4.1.1.2 | Manipular dados básicos da fiscalização | 4d | 2020-04-23 | 2020-04-28 | 187 | 33.5d | 0d |  | Desenvolvedor Júnior Java [400%]; Testador de Software | 132h | 3,280 |
| 189 | 1.2.4.1.1.3 | Possibilitar criação,remoção da fiscalização | 2d | 2020-04-29 | 2020-04-30 | 188 | 33.5d | 0d |  | Desenvolvedor Front End [300%]; Desenvolvedor Júnior Java; Testador de Software | 44h | 1,080 |
| 190 | 1.2.4.1.1.4 | Validar campos do formulário | 1d | 2020-05-01 | 2020-05-01 | 189 | 33.5d | 0d |  | Desenvolvedor Front End [300%]; Desenvolvedor Júnior Java; Testador de Software | 28h | 680 |
| 191 | 1.2.4.1.1.5 | Persistir operação no banco de dados | 1d | 2020-05-04 | 2020-05-04 | 190 | 33.5d | 0d |  | Desenvolvedor Júnior Java [200%]; Testador de Software | 20h | 480 |
| 192 | 1.2.4.1.1.6 | Exibir resultado da operação ao usuário | 1d | 2020-05-05 | 2020-05-05 | 191 | 33.5d |  |  | Desenvolvedor Front End; Desenvolvedor Júnior Java; Testador de Software | 20h | 480 |
| 193 | 1.2.4.1.2 | **Itens a fiscalizar** | 7d | 2020-04-22 | 2020-04-30 |  | 29.5d |  |  |  | 128h | 3,120 |
| 194 | 1.2.4.1.2.1 | Implementar layout para manter cadastro de itens fiscalizados | 1d | 2020-04-22 | 2020-04-22 |  | 36.5d | 0d |  | Desenvolvedor Front End [200%] | 16h | 400 |
| 195 | 1.2.4.1.2.2 | Possibilitar criação, edição e remoção de itens à fiscalizar | 2d | 2020-04-23 | 2020-04-24 | 194 | 36.5d | 0d |  | Desenvolvedor Front End [200%]; Desenvolvedor Júnior Java; Testador de Software | 44h | 1,080 |
| 196 | 1.2.4.1.2.3 | Validar campos do formulário | 1d | 2020-04-27 | 2020-04-27 | 195 | 36.5d | 0d |  | Desenvolvedor Front End [300%]; Desenvolvedor Júnior Java; Testador de Software | 28h | 680 |
| 197 | 1.2.4.1.2.4 | Persistir operação no banco de dados | 2d | 2020-04-28 | 2020-04-29 | 196 | 36.5d | 0d |  | Desenvolvedor Júnior Java; Testador de Software | 20h | 480 |
| 198 | 1.2.4.1.2.5 | Exibir resultado da operação ao usuário | 1d | 2020-04-30 | 2020-04-30 | 197 | 36.5d |  |  | Desenvolvedor Júnior Java [300%]; Desenvolvedor Front End; Testador de Software | 20h | 480 |
| 199 | 1.2.4.1.3 | **Enquadramento legal** | 8d | 2020-04-22 | 2020-05-01 |  | 28.5d |  |  |  | 128h | 3,120 |
| 200 | 1.2.4.1.3.1 | Implementar layout para manter cadastro de enquadramento legal | 1d | 2020-04-22 | 2020-04-24 |  | 35.5d | 0d |  | Desenvolvedor Front End [300%] | 24h | 600 |
| 201 | 1.2.4.1.3.2 | Possibilitar criação, edição e remoção de enquadramentos | 2d | 2020-04-24 | 2020-04-28 | 200 | 35.5d | 0d |  | Desenvolvedor Front End [200%]; Desenvolvedor Júnior Java; Testador de Software | 44h | 1,080 |
| 202 | 1.2.4.1.3.3 | Validar campos do formulário | 1d | 2020-04-28 | 2020-04-29 | 201 | 35.5d | 0d |  | Desenvolvedor Front End [200%]; Desenvolvedor Júnior Java; Testador de Software | 28h | 680 |
| 203 | 1.2.4.1.3.4 | Persistir operação no banco de dados | 1d | 2020-04-29 | 2020-04-30 | 202 | 35.5d | 0d |  | Desenvolvedor Júnior Java; Testador de Software | 12h | 280 |
| 204 | 1.2.4.1.3.5 | Exibir resultado da operação ao usuário | 1.5d | 2020-04-30 | 2020-05-01 | 203 | 35.5d |  |  | Desenvolvedor Júnior Java; Desenvolvedor Front End; Testador de Software | 20h | 480 |
| 205 | 1.2.4.1.4 | **Andamentos** | 7.33d | 2020-04-28 | 2020-05-07 |  | 25.17d |  |  |  | 82.67h | 2,026.67 |
| 206 | 1.2.4.1.4.1 | Implementar layout de acompanhamento de fases da fiscalização | 1d | 2020-04-28 | 2020-04-29 |  | 25.17d | 0d | finish no earlier than 2020-04-29 | Desenvolvedor Front End [200%] | 16h | 400 |
| 207 | 1.2.4.1.4.2 | Listar todas as fiscalizações | 2d | 2020-05-01 | 2020-05-05 | 206 | 32.17d | 0d |  | Desenvolvedor Júnior Java [300%]; Desenvolvedor Front End; Testador de Software | 30.67h | 746.67 |
| 208 | 1.2.4.1.4.3 | Exibir informações ao clicar sobre uma fiscalização | 2d | 2020-05-05 | 2020-05-07 | 207 | 32.17d |  |  | Desenvolvedor Front End; Desenvolvedor Júnior Java; Testador de Software | 36h | 880 |

| ID | WBS | Task | Duration | Start | Finish | Predecessors | Total slack | Free slack | Resources | Work | Cost |
| --- | --- | --- | --- | --- | --- | --- | --- | --- | --- | --- | --- |
| 209 | 1.2.4.2 | **Controle de fiscalizações** | 10d | 2020-05-07 | 2020-05-21 | 185 | 43.67d |  |  | 220h | 5,400 |
| 210 | 1.2.4.2.1 | Implementar layout de controle de fiscalizações | 1d | 2020-05-07 | 2020-05-08 |  | 50.67d | 0d | Desenvolvedor Front End [200%] | 16h | 400 |
| 211 | 1.2.4.2.2 | Possibilitar atualização dos dados das fases da fiscalização de empresas e profisionais, registrados ou não no conselho | 2d | 2020-05-08 | 2020-05-12 | 210 | 50.67d | 0d | Desenvolvedor Front End [300%]; Desenvolvedor Júnior Java; Testador de Software | 44h | 1,080 |
| 212 | 1.2.4.2.3 | Listar todas as fiscalizações | 2d | 2020-05-12 | 2020-05-14 | 211 | 50.67d | 0d | Desenvolvedor Front End [200%]; Desenvolvedor Júnior Java [200%]; Testador de Software | 68h | 1,680 |
| 213 | 1.2.4.2.4 | Permitir filtragem para listar fiscalizações específicas | 2d | 2020-05-14 | 2020-05-18 | 212 | 50.67d | 0d | Desenvolvedor Front End [300%]; Desenvolvedor Júnior Java; Testador de Software | 44h | 1,080 |
| 214 | 1.2.4.2.5 | Validar dados do formulário | 2d | 2020-05-18 | 2020-05-20 | 213 | 50.67d | 0d | Desenvolvedor Júnior Java [300%]; Desenvolvedor Front End; Testador de Software | 36h | 880 |
| 215 | 1.2.4.2.6 | Persistir operações no banco de dados | 1d | 2020-05-20 | 2020-05-21 | 214 | 50.67d |  | Desenvolvedor Júnior Java; Testador de Software | 12h | 280 |
| 216 | 1.2.4.3 | **Manter integração** | 8.5d | 2020-05-07 | 2020-05-19 | 185 | 25.17d | 0d |  | 168h | 8,660 |
| 217 | 1.2.4.3.1 | Realizar integração com sistema cadastral para buscar dados de contato de inscritos e outras pessoas não registradas | 4d | 2020-05-07 | 2020-05-13 |  | 36.67d |  | Desenvolvedor Sênior Java [300%]; Testador de Software | 100h | 5,180 |
| 218 | 1.2.4.3.2 | Realizar integração com sistema financeiro da receita informando dados da dívidas/créditos | 4.25d | 2020-05-07 | 2020-05-19 |  | 32.17d |  | Desenvolvedor Sênior Java [200%]; Testador de Software | 68h | 3,480 |
| 219 | 1.2.4.4 | **Emissão de formulários e documentos** | 15.17d | 2020-05-19 | 2020-06-09 | 216 | 22d | 0d |  | 256h | 6,230 |
| 220 | 1.2.4.4.1 | Implementar layout para emitir formulário e documentos no local da fiscalização | 1d | 2020-05-19 | 2020-05-20 |  | 41.17d | 0d | Desenvolvedor Front End [200%] | 16h | 400 |
| 221 | 1.2.4.4.2 | Gerar formulários e documentos no local da fiscalização | 2d | 2020-05-20 | 2020-05-22 | 220 | 41.17d |  | Desenvolvedor Júnior Java [300%]; Testador de Software | 52h | 1,280 |
| 222 | 1.2.4.4.3 | Implementar layout para inserir registro da fiscalização no local (mobile) | 2d | 2020-05-25 | 2020-05-26 |  | 29d | 0d | Desenvolvedor Front End [200%]; Testador de Software | 36h | 880 |
| 223 | 1.2.4.4.4 | Realizar consulta de reincidência de fiscalização | 2d | 2020-05-27 | 2020-05-28 | 222 | 29d | 0d | Desenvolvedor Júnior Java; Testador de Software | 20h | 480 |
| 224 | 1.2.4.4.5 | Validar campos inseridos no formulário | 2d | 2020-05-29 | 2020-06-01 | 223 | 29d | 0d | Desenvolvedor Front End; Desenvolvedor Júnior Java; Testador de Software | 36h | 880 |
| 225 | 1.2.4.4.6 | Manter dados em cache para futuramente efetuar uma sincronização com servidor | 6d | 2020-06-02 | 2020-06-09 | 224 | 29d |  | Desenvolvedor PWA; Testador de Software | 96h | 2,310 |
| 226 | 1.2.4.5 | **Sincronização dos dados** | 8d | 2020-06-10 | 2020-06-19 | 219 | 22d |  |  | 136h | 3,580 |
| 227 | 1.2.4.5.1 | Criar service worker para aplicação (PWA) | 2d | 2020-06-10 | 2020-06-11 |  | 29d | 0d | Desenvolvedor PWA [200%]; Testador de Software | 36h | 980 |
| 228 | 1.2.4.5.2 | Criar uma lista de depências que devem ser armazenadas em cache local | 2d | 2020-06-12 | 2020-06-15 | 227 | 29d | 0d | Desenvolvedor PWA [200%]; Testador de Software | 36h | 980 |
| 229 | 1.2.4.5.3 | Criar listener para verificar a existência de sinal wifi, 4G ou 3G | 1d | 2020-06-16 | 2020-06-16 | 228 | 29d | 0d | Desenvolvedor PWA [200%]; Testador de Software | 20h | 530 |
| 230 | 1.2.4.5.4 | Enviar dados ao existir sinal de rede | 1d | 2020-06-17 | 2020-06-17 | 229 | 29d | 0d | Desenvolvedor PWA; Testador de Software | 12h | 305 |
| 231 | 1.2.4.5.5 | Persistir operação no banco de dados | 1d | 2020-06-18 | 2020-06-18 | 230 | 29d | 0d | Desenvolvedor PWA; Testador de Software | 12h | 305 |
| 232 | 1.2.4.5.6 | Informar resultado da operação para o usuário | 1d | 2020-06-19 | 2020-06-19 | 231 | 29d |  | Desenvolvedor Front End [200%]; Testador de Software | 20h | 480 |

| ID | WBS | Task | Duration | Start | Finish | Predecessors | Total slack | Free slack | Resources | Work | Cost |
| --- | --- | --- | --- | --- | --- | --- | --- | --- | --- | --- | --- |
| 233 | 1.2.5 | **Serviços online PF/PJ** | 26d | 2020-06-22 | 2020-07-27 | 184 | 19d |  |  | 476h | 14,975 |
| 234 | 1.2.5.1 | **Solicitação de Acesso** | 8d | 2020-06-22 | 2020-07-01 |  | 22d | 0d |  | 128h | 3,080 |
| 235 | 1.2.5.1.1 | Implementar layout para solicitar acesso ao sistema | 1d | 2020-06-22 | 2020-06-22 |  | 29d | 0d | Desenvolvedor Front End [200%] | 16h | 400 |
| 236 | 1.2.5.1.2 | Validar campos digitados no formulário | 1d | 2020-06-23 | 2020-06-23 | 235 | 29d | 0d | Desenvolvedor Front End [200%]; Desenvolvedor Júnior Java; Testador de Software | 28h | 680 |
| 237 | 1.2.5.1.3 | Verificar se existe usuário no sistema cadastral de pessoa física | 1d | 2020-06-24 | 2020-06-24 | 236 | 29d | 0d | Desenvolvedor Júnior Java; Testador de Software | 12h | 280 |
| 238 | 1.2.5.1.4 | Criar solicitação de acesso | 1d | 2020-06-25 | 2020-06-25 | 237 | 29d | 0d | Desenvolvedor Júnior Java; Testador de Software | 12h | 280 |
| 239 | 1.2.5.1.5 | Persistir operação no banco de dados | 1d | 2020-06-26 | 2020-06-26 | 238 | 29d | 0d | Desenvolvedor Júnior Java; Testador de Software | 12h | 280 |
| 240 | 1.2.5.1.6 | Listar solicitações pendentes | 2d | 2020-06-29 | 2020-06-30 | 239 | 29d | 0d | Desenvolvedor Júnior Java; Desenvolvedor Front End; Testador de Software | 36h | 880 |
| 241 | 1.2.5.1.7 | Aprovar ou rejeitar solicitação | 1d | 2020-07-01 | 2020-07-01 | 240 | 29d |  | Desenvolvedor Júnior Java; Testador de Software | 12h | 280 |
| 242 | 1.2.5.2 | **Login** | 6d | 2020-07-02 | 2020-07-09 | 234 | 22d | 0d |  | 104h | 2,520 |
| 243 | 1.2.5.2.1 | Implementar layout para realizar login no sistema | 1d | 2020-07-02 | 2020-07-02 |  | 29d | 0d | Desenvolvedor Front End [200%] | 16h | 400 |
| 244 | 1.2.5.2.2 | Implementar layout para recuperação de senha | 1d | 2020-07-03 | 2020-07-03 | 243 | 29d | 0d | Desenvolvedor Front End | 8h | 200 |
| 245 | 1.2.5.2.3 | Validar campos do formulário | 1d | 2020-07-06 | 2020-07-06 | 243, 244 | 29d | 0d | Desenvolvedor Front End [200%]; Desenvolvedor Júnior Java [200%]; Testador de Software | 36h | 880 |
| 246 | 1.2.5.2.4 | Verificar se o usuário está cadastrado no banco de dados | 1d | 2020-07-07 | 2020-07-07 | 245 | 29d | 0d | Desenvolvedor Júnior Java; Testador de Software | 12h | 280 |
| 247 | 1.2.5.2.5 | Exibir retorno da operação ao usuário | 1d | 2020-07-08 | 2020-07-08 | 246 | 29d | 0d | Desenvolvedor Front End; Desenvolvedor Júnior Java; Testador de Software | 20h | 480 |
| 248 | 1.2.5.2.6 | Realizar redirecionamento | 1d | 2020-07-09 | 2020-07-09 | 247 | 29d |  | Desenvolvedor Júnior Java; Testador de Software | 12h | 280 |
| 249 | 1.2.5.3 | **Controle de Permissões** | 6d | 2020-07-10 | 2020-07-17 | 242 | 19d | 0d |  | 128h | 6,535 |
| 250 | 1.2.5.3.1 | Limitar as ações do usuário com base nas permissões de seu perfil | 2d | 2020-07-10 | 2020-07-13 |  | 30d |  | Desenvolvedor Sênior Java [300%]; Testador de Software | 52h | 2,630 |
| 251 | 1.2.5.3.2 | Possibilitar que o usuário altere apenas as informações cadastrais permitidas pela COFECON | 3d | 2020-07-15 | 2020-07-17 |  | 26d |  | Desenvolvedor Sênior Java [300%]; Testador de Software | 76h | 3,905 |
| 252 | 1.2.5.4 | **Consultas** | 6d | 2020-07-20 | 2020-07-27 | 249 | 19d |  |  | 116h | 2,840 |
| 253 | 1.2.5.4.1 | Implementar layout para consultas de situação financeira | 1d | 2020-07-20 | 2020-07-20 |  | 26d | 0d | Desenvolvedor Front End [200%] | 16h | 400 |
| 254 | 1.2.5.4.2 | Validar campos do formulário | 1d | 2020-07-21 | 2020-07-21 | 253 | 26d | 0d | Desenvolvedor Front End [300%]; Desenvolvedor Júnior Java; Testador de Software | 28h | 680 |
| 255 | 1.2.5.4.3 | Listar resultados obtidos na consulta | 1d | 2020-07-22 | 2020-07-22 | 254 | 26d | 0d | Desenvolvedor Front End [200%]; Testador de Software | 20h | 480 |
| 256 | 1.2.5.4.4 | Possibilitar a realização de filtros nas mediações impostas pela COFECON | 3d | 2020-07-23 | 2020-07-27 | 255 | 26d |  | Desenvolvedor Front End [200%]; Desenvolvedor Júnior Java; Testador de Software | 52h | 1,280 |

| ID | WBS | Task | Duration | Start | Finish | Predecessors | Total slack | Free slack | Resources | Work | Cost |
| --- | --- | --- | --- | --- | --- | --- | --- | --- | --- | --- | --- |
| 257 | 1.3 | **Instalação/Implantação** | 148d | 2020-01-24 | 2020-08-18 |  | 7d | 0d |  | 476h | 25,535 |
| 258 | 1.3.1 | **COFECON** | 7d | 2020-01-24 | 2020-02-03 | 55 | 144d | 125d |  | 152h | 17,750 |
| 259 | 1.3.1.1 | Comprar máquinas para promover infraestutura necessária para garantir disponibilidade exigida da aplicação | 1d | 2020-01-24 | 2020-01-24 |  | 153.5d | 0d | Computador Desktop [300%]; Especialista em Compras; Especialista em Redes e Infraestrutura | 16h | 9,450 |
| 260 | 1.3.1.2 | Configurar redes dos servidores | 2d | 2020-01-24 | 2020-01-27 |  | 151d | 0d | Especialista em Redes e Infraestrutura | 16h | 500 |
| 261 | 1.3.1.3 | Contratar servidores para armazenamento de banco de dados | 1d | 2020-01-24 | 2020-01-24 |  | 152d | 0d | Especialista em Redes e Infraestrutura; Computador Desktop; Especialista em Compras | 16h | 3,450 |
| 262 | 1.3.1.4 | Contratar serviço de internet de alta disponibilidade | 0.5d | 2020-01-27 | 2020-01-27 |  | 156.5d |  | Provedor de Internet; Especialista em Compras; Especialista em Redes e Infraestrutura | 8h | 825 |
| 263 | 1.3.1.5 | Configurar firewall da aplicação | 2d | 2020-01-28 | 2020-01-29 | 260 | 151d | 0d | Especialista em Redes e Infraestrutura | 16h | 500 |
| 264 | 1.3.1.6 | Implementar sistema de copia de segurança e recuperação | 2d | 2020-01-27 | 2020-01-28 | 261 | 152d | 1d | Administrador de Banco de Dados [200%]; Desenvolvedor Sênior Java [200%]; Especialista em Redes e Infraestrutura | 48h | 2,050 |
| 265 | 1.3.1.7 | Contratar solução de anti-vírus | 0.5d | 2020-01-27 | 2020-01-27 | 259 | 153.5d | 2.5d | Especialista em Redes e Infraestrutura; Especialista em Compras | 8h | 225 |
| 266 | 1.3.1.8 | Efetuar instalação física e lógica, efetuando todas configurações necessárias | 3d | 2020-01-30 | 2020-02-03 | 265, 264, 263 | 151d |  | Especialista em Redes e Infraestrutura | 24h | 750 |
| 267 | 1.3.2 | **CORECONS** | 16d | 2020-07-28 | 2020-08-18 | 70, 258 | 7d |  |  | 324h | 7,785 |
| 268 | 1.3.2.1 | **Grupo 1** | 1d | 2020-07-28 | 2020-07-28 |  | 19d | 0d |  | 12h | 505 |
| 269 | 1.3.2.1.1 | SP | 1d | 2020-07-28 | 2020-07-28 |  | 26d |  | Desenvolvedor Sênior Java; Testador de Software | 12h | 505 |
| 270 | 1.3.2.2 | **Grupo 2** | 1d | 2020-07-29 | 2020-07-29 | 268 | 19d | 0d |  | 24h | 560 |
| 271 | 1.3.2.2.1 | COFECON | 1d | 2020-07-29 | 2020-07-29 |  | 26d |  | Desenvolvedor Júnior Java; Testador de Software | 12h | 280 |
| 272 | 1.3.2.2.2 | RJ | 1d | 2020-07-29 | 2020-07-29 |  | 26d |  | Desenvolvedor Júnior Java; Testador de Software | 12h | 280 |
| 273 | 1.3.2.3 | **Grupo 3** | 3d | 2020-07-30 | 2020-08-03 | 270 | 17d | 0d |  | 72h | 1,680 |
| 274 | 1.3.2.3.1 | MG | 1d | 2020-07-30 | 2020-07-30 |  | 26d |  | Desenvolvedor Júnior Java; Testador de Software | 12h | 280 |
| 275 | 1.3.2.3.2 | RS | 1d | 2020-07-30 | 2020-07-30 |  | 26d |  | Desenvolvedor Júnior Java; Testador de Software | 12h | 280 |
| 276 | 1.3.2.3.3 | PR | 1d | 2020-07-30 | 2020-07-30 |  | 26d |  | Desenvolvedor Júnior Java; Testador de Software | 12h | 280 |
| 277 | 1.3.2.3.4 | BA | 1d | 2020-08-03 | 2020-08-03 |  | 24d |  | Desenvolvedor Júnior Java; Testador de Software | 12h | 280 |
| 278 | 1.3.2.3.5 | SC | 1d | 2020-08-03 | 2020-08-03 |  | 24d |  | Desenvolvedor Júnior Java; Testador de Software | 12h | 280 |
| 279 | 1.3.2.3.6 | DF | 1d | 2020-08-03 | 2020-08-03 |  | 24d |  | Desenvolvedor Júnior Java; Testador de Software | 12h | 280 |
| 280 | 1.3.2.4 | **Grupo 4** | 11d | 2020-08-04 | 2020-08-18 | 273 | 7d |  |  | 216h | 5,040 |
| 281 | 1.3.2.4.1 | AC | 1d | 2020-08-04 | 2020-08-04 |  | 24d |  | Desenvolvedor Júnior Java; Testador de Software | 12h | 280 |
| 282 | 1.3.2.4.2 | AL | 1d | 2020-08-04 | 2020-08-04 |  | 24d |  | Desenvolvedor Júnior Java; Testador de Software | 12h | 280 |
| 283 | 1.3.2.4.3 | AM | 1d | 2020-08-04 | 2020-08-04 |  | 24d |  | Desenvolvedor Júnior Java; Testador de Software | 12h | 280 |
| 284 | 1.3.2.4.4 | CE | 1d | 2020-08-10 | 2020-08-10 |  | 20d |  | Desenvolvedor Júnior Java; Testador de Software | 12h | 280 |
| 285 | 1.3.2.4.5 | ES | 1d | 2020-08-10 | 2020-08-10 |  | 20d |  | Desenvolvedor Júnior Java; Testador de Software | 12h | 280 |
| 286 | 1.3.2.4.6 | GO | 1d | 2020-08-10 | 2020-08-10 |  | 20d |  | Desenvolvedor Júnior Java; Testador de Software | 12h | 280 |
| 287 | 1.3.2.4.7 | MA | 1d | 2020-08-10 | 2020-08-10 |  | 20d |  | Desenvolvedor Júnior Java; Testador de Software | 12h | 280 |
| 288 | 1.3.2.4.8 | MT | 1d | 2020-08-10 | 2020-08-10 |  | 20d |  | Desenvolvedor Júnior Java; Testador de Software | 12h | 280 |
| 289 | 1.3.2.4.9 | MS | 1d | 2020-08-10 | 2020-08-10 |  | 20d |  | Desenvolvedor Júnior Java; Testador de Software | 12h | 280 |
| 290 | 1.3.2.4.10 | BA | 1d | 2020-08-12 | 2020-08-12 |  | 18d |  | Desenvolvedor Júnior Java; Testador de Software | 12h | 280 |
| 291 | 1.3.2.4.11 | PB | 1d | 2020-08-12 | 2020-08-12 |  | 18d |  | Desenvolvedor Júnior Java; Testador de Software | 12h | 280 |
| 292 | 1.3.2.4.12 | PE | 1d | 2020-08-12 | 2020-08-12 |  | 18d |  | Desenvolvedor Júnior Java; Testador de Software | 12h | 280 |
| 293 | 1.3.2.4.13 | PI | 1d | 2020-08-17 | 2020-08-17 |  | 15d |  | Desenvolvedor Júnior Java; Testador de Software | 12h | 280 |
| 294 | 1.3.2.4.14 | RN | 1d | 2020-08-17 | 2020-08-17 |  | 15d |  | Desenvolvedor Júnior Java; Testador de Software | 12h | 280 |
| 295 | 1.3.2.4.15 | RO | 1d | 2020-08-17 | 2020-08-17 |  | 15d |  | Desenvolvedor Júnior Java; Testador de Software | 12h | 280 |
| 296 | 1.3.2.4.16 | RR | 1d | 2020-08-18 | 2020-08-18 |  | 14d |  | Desenvolvedor Júnior Java; Testador de Software | 12h | 280 |
| 297 | 1.3.2.4.17 | SE | 1d | 2020-08-18 | 2020-08-18 |  | 14d |  | Desenvolvedor Júnior Java; Testador de Software | 12h | 280 |
| 298 | 1.3.2.4.18 | TO | 1d | 2020-08-18 | 2020-08-18 |  | 14d |  | Desenvolvedor Júnior Java; Testador de Software | 12h | 280 |

| ID | WBS | Task | Duration | Start | Finish | Predecessors | Total slack | Free slack | Resources | Work | Cost |
| --- | --- | --- | --- | --- | --- | --- | --- | --- | --- | --- | --- |
| 299 | 1.4 | **Migração de Dados** | 80d | 2020-08-19 | 2020-12-08 | 257 | 0d |  |  | 5832h | 350,850 |
| 300 | 1.4.2 | **COFECON/CORECONS** | 80d | 2020-08-19 | 2020-12-08 |  | 0d |  |  | 5832h | 350,850 |
| 301 | 1.4.2.1 | **Grupo 1** | 10d | 2020-08-19 | 2020-09-01 |  | 7d | 0d |  | 216h | 13,550 |
| 302 | 1.4.2.1.1 | **SP** | 10d | 2020-08-19 | 2020-09-01 |  | 7d |  | Passagem aérea [0.1%]; Gastos Gerais [0.1%] | 216h | 13,550 |
| 303 | 1.4.1.1 | Extração de dados | 3d | 2020-08-19 | 2020-08-21 |  | 14d | 0d | Especialista em Migração de Dados; Administrador de Banco de Dados; Testador de Software | 72h | 2,280 |
| 304 | 1.4.1.2 | Efetuar conexão entre as fonte de dados | 2d | 2020-08-24 | 2020-08-25 | 303 | 14d | 0d | Especialista em Migração de Dados; Administrador de Banco de Dados; Testador de Software | 48h | 1,520 |
| 305 | 1.4.1.3 | Efetuar rotinas de extração e gravação | 2d | 2020-08-26 | 2020-08-27 | 304 | 14d | 0d | Especialista em Migração de Dados; Testador de Software; Administrador de Banco de Dados | 48h | 1,520 |
| 306 | 1.4.1.4 | Efetuar teste e conferir resultados | 3d | 2020-08-28 | 2020-09-01 | 305 | 14d |  | Testador de Software; Especialista em Migração de Dados | 48h | 1,230 |
| 307 | 1.4.2.2 | **Grupo 2** | 10d | 2020-09-02 | 2020-09-15 | 301 | 7d | 0d | Passagem aérea [0.1%]; Gastos Gerais [0.1%] | 432h | 25,100 |
| 308 | 1.4.2.2.1 | **COFECON** | 10d | 2020-09-02 | 2020-09-15 |  | 7d |  |  | 216h | 6,550 |
| 309 | 1.4.1.1 | Extração de dados | 3d | 2020-09-02 | 2020-09-04 |  | 14d | 0d | Especialista em Migração de Dados; Administrador de Banco de Dados; Testador de Software | 72h | 2,280 |
| 310 | 1.4.1.2 | Efetuar conexão entre as fonte de dados | 2d | 2020-09-07 | 2020-09-08 | 309 | 14d | 0d | Especialista em Migração de Dados; Administrador de Banco de Dados; Testador de Software | 48h | 1,520 |
| 311 | 1.4.1.3 | Efetuar rotinas de extração e gravação | 2d | 2020-09-09 | 2020-09-10 | 310 | 14d | 0d | Especialista em Migração de Dados; Testador de Software; Administrador de Banco de Dados | 48h | 1,520 |
| 312 | 1.4.1.4 | Efetuar teste e conferir resultados | 3d | 2020-09-11 | 2020-09-15 | 311 | 14d |  | Testador de Software; Especialista em Migração de Dados | 48h | 1,230 |
| 313 | 1.4.2.2.2 | **RJ** | 10d | 2020-09-02 | 2020-09-15 |  | 7d |  |  | 216h | 6,550 |
| 314 | 1.4.1.1 | Extração de dados | 3d | 2020-09-02 | 2020-09-04 |  | 14d | 0d | Especialista em Migração de Dados; Administrador de Banco de Dados; Testador de Software | 72h | 2,280 |
| 315 | 1.4.1.2 | Efetuar conexão entre as fonte de dados | 2d | 2020-09-07 | 2020-09-08 | 314 | 14d | 0d | Especialista em Migração de Dados; Administrador de Banco de Dados; Testador de Software | 48h | 1,520 |
| 316 | 1.4.1.3 | Efetuar rotinas de extração e gravação | 2d | 2020-09-09 | 2020-09-10 | 315 | 14d | 0d | Especialista em Migração de Dados; Testador de Software; Administrador de Banco de Dados | 48h | 1,520 |
| 317 | 1.4.1.4 | Efetuar teste e conferir resultados | 3d | 2020-09-11 | 2020-09-15 | 316 | 14d |  | Testador de Software; Especialista em Migração de Dados | 48h | 1,230 |
| 318 | 1.4.2.3 | **Grupo 3** | 20d | 2020-09-16 | 2020-10-13 | 307 | 7d | 0d | Passagem aérea [0.1%]; Gastos Gerais [0.1%] | 1296h | 69,300 |
| 319 | 1.4.2.3.1 | **MG** | 10d | 2020-09-16 | 2020-09-29 |  | 17d |  |  | 216h | 6,550 |
| 320 | 1.4.1.1 | Extração de dados | 3d | 2020-09-16 | 2020-09-18 |  | 24d | 0d | Especialista em Migração de Dados; Administrador de Banco de Dados; Testador de Software | 72h | 2,280 |
| 321 | 1.4.1.2 | Efetuar conexão entre as fonte de dados | 2d | 2020-09-21 | 2020-09-22 | 320 | 24d | 0d | Especialista em Migração de Dados; Administrador de Banco de Dados; Testador de Software | 48h | 1,520 |
| 322 | 1.4.1.3 | Efetuar rotinas de extração e gravação | 2d | 2020-09-23 | 2020-09-24 | 321 | 24d | 0d | Especialista em Migração de Dados; Testador de Software; Administrador de Banco de Dados | 48h | 1,520 |
| 323 | 1.4.1.4 | Efetuar teste e conferir resultados | 3d | 2020-09-25 | 2020-09-29 | 322 | 24d |  | Testador de Software; Especialista em Migração de Dados | 48h | 1,230 |

| ID | WBS | Task | Duration | Start | Finish | Predecessors | Total slack | Free slack | Resources | Work | Cost |
| --- | --- | --- | --- | --- | --- | --- | --- | --- | --- | --- | --- |
| 324 | 1.4.2.3.2 | **RS** | 10d | 2020-09-16 | 2020-09-29 |  | 17d |  |  | 216h | 6,550 |
| 325 | 1.4.1.1 | Extração de dados | 3d | 2020-09-16 | 2020-09-18 |  | 24d | 0d | Especialista em Migração de Dados; Administrador de Banco de Dados; Testador de Software | 72h | 2,280 |
| 326 | 1.4.1.2 | Efetuar conexão entre as fonte de dados | 2d | 2020-09-21 | 2020-09-22 | 325 | 24d | 0d | Especialista em Migração de Dados; Administrador de Banco de Dados; Testador de Software | 48h | 1,520 |
| 327 | 1.4.1.3 | Efetuar rotinas de extração e gravação | 2d | 2020-09-23 | 2020-09-24 | 326 | 24d | 0d | Especialista em Migração de Dados; Testador de Software; Administrador de Banco de Dados | 48h | 1,520 |
| 328 | 1.4.1.4 | Efetuar teste e conferir resultados | 3d | 2020-09-25 | 2020-09-29 | 327 | 24d |  | Testador de Software; Especialista em Migração de Dados | 48h | 1,230 |
| 329 | 1.4.2.3.3 | **PR** | 10d | 2020-09-16 | 2020-09-29 |  | 17d |  |  | 216h | 6,550 |
| 330 | 1.4.1.1 | Extração de dados | 3d | 2020-09-16 | 2020-09-18 |  | 24d | 0d | Especialista em Migração de Dados; Administrador de Banco de Dados; Testador de Software | 72h | 2,280 |
| 331 | 1.4.1.2 | Efetuar conexão entre as fonte de dados | 2d | 2020-09-21 | 2020-09-22 | 330 | 24d | 0d | Especialista em Migração de Dados; Administrador de Banco de Dados; Testador de Software | 48h | 1,520 |
| 332 | 1.4.1.3 | Efetuar rotinas de extração e gravação | 2d | 2020-09-23 | 2020-09-24 | 331 | 24d | 0d | Especialista em Migração de Dados; Testador de Software; Administrador de Banco de Dados | 48h | 1,520 |
| 333 | 1.4.1.4 | Efetuar teste e conferir resultados | 3d | 2020-09-25 | 2020-09-29 | 332 | 24d |  | Testador de Software; Especialista em Migração de Dados | 48h | 1,230 |
| 334 | 1.4.2.3.4 | **BA** | 10d | 2020-09-16 | 2020-09-29 |  | 17d |  |  | 216h | 6,550 |
| 335 | 1.4.1.1 | Extração de dados | 3d | 2020-09-16 | 2020-09-18 |  | 24d | 0d | Especialista em Migração de Dados; Administrador de Banco de Dados; Testador de Software | 72h | 2,280 |
| 336 | 1.4.1.2 | Efetuar conexão entre as fonte de dados | 2d | 2020-09-21 | 2020-09-22 | 335 | 24d | 0d | Especialista em Migração de Dados; Administrador de Banco de Dados; Testador de Software | 48h | 1,520 |
| 337 | 1.4.1.3 | Efetuar rotinas de extração e gravação | 2d | 2020-09-23 | 2020-09-24 | 336 | 24d | 0d | Especialista em Migração de Dados; Testador de Software; Administrador de Banco de Dados | 48h | 1,520 |
| 338 | 1.4.1.4 | Efetuar teste e conferir resultados | 3d | 2020-09-25 | 2020-09-29 | 337 | 24d |  | Testador de Software; Especialista em Migração de Dados | 48h | 1,230 |
| 339 | 1.4.2.3.5 | **SC** | 10d | 2020-09-16 | 2020-09-29 |  | 17d |  |  | 216h | 6,550 |
| 340 | 1.4.1.1 | Extração de dados | 3d | 2020-09-16 | 2020-09-18 |  | 24d | 0d | Especialista em Migração de Dados; Administrador de Banco de Dados; Testador de Software | 72h | 2,280 |
| 341 | 1.4.1.2 | Efetuar conexão entre as fonte de dados | 2d | 2020-09-21 | 2020-09-22 | 340 | 24d | 0d | Especialista em Migração de Dados; Administrador de Banco de Dados; Testador de Software | 48h | 1,520 |
| 342 | 1.4.1.3 | Efetuar rotinas de extração e gravação | 2d | 2020-09-23 | 2020-09-24 | 341 | 24d | 0d | Especialista em Migração de Dados; Testador de Software; Administrador de Banco de Dados | 48h | 1,520 |
| 343 | 1.4.1.4 | Efetuar teste e conferir resultados | 3d | 2020-09-25 | 2020-09-29 | 342 | 24d |  | Testador de Software; Especialista em Migração de Dados | 48h | 1,230 |
| 344 | 1.4.2.3.6 | **DF** | 20d | 2020-09-16 | 2020-10-13 |  | 7d |  |  | 216h | 6,550 |
| 345 | 1.4.1.1 | Extração de dados | 6d | 2020-09-16 | 2020-10-02 |  | 14d | 0d | Especialista em Migração de Dados; Administrador de Banco de Dados; Testador de Software | 72h | 2,280 |
| 346 | 1.4.1.2 | Efetuar conexão entre as fonte de dados | 2d | 2020-10-05 | 2020-10-06 | 345 | 14d | 0d | Especialista em Migração de Dados; Administrador de Banco de Dados; Testador de Software | 48h | 1,520 |
| 347 | 1.4.1.3 | Efetuar rotinas de extração e gravação | 2d | 2020-10-07 | 2020-10-08 | 346 | 14d | 0d | Especialista em Migração de Dados; Testador de Software; Administrador de Banco de Dados | 48h | 1,520 |
| 348 | 1.4.1.4 | Efetuar teste e conferir resultados | 3d | 2020-10-09 | 2020-10-13 | 347 | 14d |  | Testador de Software; Especialista em Migração de Dados | 48h | 1,230 |

| ID | WBS | Task | Duration | Start | Finish | Predecessors | Total slack | Free slack | Resources | Work | Cost |
| --- | --- | --- | --- | --- | --- | --- | --- | --- | --- | --- | --- |
| 349 | 1.4.2.4 | **Grupo 4** | 40d | 2020-10-14 | 2020-12-08 | 318 | 0d |  | Passagem aérea [0.1%]; Gastos Gerais [0.1%] | 3888h | 242,900 |
| 350 | 1.4.2.4.1 | **AC** | 10d | 2020-10-14 | 2020-10-27 |  | 30d |  |  | 216h | 6,550 |
| 351 | 1.4.1.1 | Extração de dados | 3d | 2020-10-14 | 2020-10-16 |  | 37d | 0d | Especialista em Migração de Dados; Administrador de Banco de Dados; Testador de Software | 72h | 2,280 |
| 352 | 1.4.1.2 | Efetuar conexão entre as fonte de dados | 2d | 2020-10-19 | 2020-10-20 | 351 | 37d | 0d | Especialista em Migração de Dados; Administrador de Banco de Dados; Testador de Software | 48h | 1,520 |
| 353 | 1.4.1.3 | Efetuar rotinas de extração e gravação | 2d | 2020-10-21 | 2020-10-22 | 352 | 37d | 0d | Especialista em Migração de Dados; Testador de Software; Administrador de Banco de Dados | 48h | 1,520 |
| 354 | 1.4.1.4 | Efetuar teste e conferir resultados | 3d | 2020-10-23 | 2020-10-27 | 353 | 37d |  | Testador de Software; Especialista em Migração de Dados | 48h | 1,230 |
| 355 | 1.4.2.4.2 | **AL** | 10d | 2020-10-14 | 2020-10-27 |  | 30d |  |  | 216h | 6,550 |
| 356 | 1.4.1.1 | Extração de dados | 3d | 2020-10-14 | 2020-10-16 |  | 37d | 0d | Especialista em Migração de Dados; Administrador de Banco de Dados; Testador de Software | 72h | 2,280 |
| 357 | 1.4.1.2 | Efetuar conexão entre as fonte de dados | 2d | 2020-10-19 | 2020-10-20 | 356 | 37d | 0d | Especialista em Migração de Dados; Administrador de Banco de Dados; Testador de Software | 48h | 1,520 |
| 358 | 1.4.1.3 | Efetuar rotinas de extração e gravação | 2d | 2020-10-21 | 2020-10-22 | 357 | 37d | 0d | Especialista em Migração de Dados; Testador de Software; Administrador de Banco de Dados | 48h | 1,520 |
| 359 | 1.4.1.4 | Efetuar teste e conferir resultados | 3d | 2020-10-23 | 2020-10-27 | 358 | 37d |  | Testador de Software; Especialista em Migração de Dados | 48h | 1,230 |
| 360 | 1.4.2.4.3 | **AM** | 10d | 2020-10-14 | 2020-10-27 |  | 30d |  |  | 216h | 6,550 |
| 361 | 1.4.1.1 | Extração de dados | 3d | 2020-10-14 | 2020-10-16 |  | 37d | 0d | Especialista em Migração de Dados; Administrador de Banco de Dados; Testador de Software | 72h | 2,280 |
| 362 | 1.4.1.2 | Efetuar conexão entre as fonte de dados | 2d | 2020-10-19 | 2020-10-20 | 361 | 37d | 0d | Especialista em Migração de Dados; Administrador de Banco de Dados; Testador de Software | 48h | 1,520 |
| 363 | 1.4.1.3 | Efetuar rotinas de extração e gravação | 2d | 2020-10-21 | 2020-10-22 | 362 | 37d | 0d | Especialista em Migração de Dados; Testador de Software; Administrador de Banco de Dados | 48h | 1,520 |
| 364 | 1.4.1.4 | Efetuar teste e conferir resultados | 3d | 2020-10-23 | 2020-10-27 | 363 | 37d |  | Testador de Software; Especialista em Migração de Dados | 48h | 1,230 |
| 365 | 1.4.2.4.4 | **CE** | 10d | 2020-10-14 | 2020-10-27 |  | 30d |  |  | 216h | 6,550 |
| 366 | 1.4.1.1 | Extração de dados | 3d | 2020-10-14 | 2020-10-16 |  | 37d | 0d | Especialista em Migração de Dados; Administrador de Banco de Dados; Testador de Software | 72h | 2,280 |
| 367 | 1.4.1.2 | Efetuar conexão entre as fonte de dados | 2d | 2020-10-19 | 2020-10-20 | 366 | 37d | 0d | Especialista em Migração de Dados; Administrador de Banco de Dados; Testador de Software | 48h | 1,520 |
| 368 | 1.4.1.3 | Efetuar rotinas de extração e gravação | 2d | 2020-10-21 | 2020-10-22 | 367 | 37d | 0d | Especialista em Migração de Dados; Testador de Software; Administrador de Banco de Dados | 48h | 1,520 |
| 369 | 1.4.1.4 | Efetuar teste e conferir resultados | 3d | 2020-10-23 | 2020-10-27 | 368 | 37d |  | Testador de Software; Especialista em Migração de Dados | 48h | 1,230 |
| 370 | 1.4.2.4.5 | **ES** | 10d | 2020-10-14 | 2020-10-27 |  | 30d |  |  | 216h | 6,550 |
| 371 | 1.4.1.1 | Extração de dados | 3d | 2020-10-14 | 2020-10-16 |  | 37d | 0d | Especialista em Migração de Dados; Administrador de Banco de Dados; Testador de Software | 72h | 2,280 |
| 372 | 1.4.1.2 | Efetuar conexão entre as fonte de dados | 2d | 2020-10-19 | 2020-10-20 | 371 | 37d | 0d | Especialista em Migração de Dados; Administrador de Banco de Dados; Testador de Software | 48h | 1,520 |
| 373 | 1.4.1.3 | Efetuar rotinas de extração e gravação | 2d | 2020-10-21 | 2020-10-22 | 372 | 37d | 0d | Especialista em Migração de Dados; Testador de Software; Administrador de Banco de Dados | 48h | 1,520 |
| 374 | 1.4.1.4 | Efetuar teste e conferir resultados | 3d | 2020-10-23 | 2020-10-27 | 373 | 37d |  | Testador de Software; Especialista em Migração de Dados | 48h | 1,230 |

| ID | WBS | Task | Duration | Start | Finish | Predecessors | Total slack | Free slack | Resources | Work | Cost |
| --- | --- | --- | --- | --- | --- | --- | --- | --- | --- | --- | --- |
| 375 | 1.4.2.4.6 | **GO** | 20d | 2020-10-14 | 2020-11-10 |  | 20d |  |  | 216h | 6,550 |
| 376 | 1.4.1.1 | Extração de dados | 6d | 2020-10-14 | 2020-10-30 |  | 27d | 0d | Especialista em Migração de Dados; Administrador de Banco de Dados; Testador de Software | 72h | 2,280 |
| 377 | 1.4.1.2 | Efetuar conexão entre as fonte de dados | 2d | 2020-11-02 | 2020-11-03 | 376 | 27d | 0d | Especialista em Migração de Dados; Administrador de Banco de Dados; Testador de Software | 48h | 1,520 |
| 378 | 1.4.1.3 | Efetuar rotinas de extração e gravação | 2d | 2020-11-04 | 2020-11-05 | 377 | 27d | 0d | Especialista em Migração de Dados; Testador de Software; Administrador de Banco de Dados | 48h | 1,520 |
| 379 | 1.4.1.4 | Efetuar teste e conferir resultados | 3d | 2020-11-06 | 2020-11-10 | 378 | 27d |  | Testador de Software; Especialista em Migração de Dados | 48h | 1,230 |
| 380 | 1.4.2.4.7 | **MA** | 20d | 2020-10-14 | 2020-11-10 |  | 20d |  |  | 216h | 6,550 |
| 381 | 1.4.1.1 | Extração de dados | 6d | 2020-10-14 | 2020-10-30 |  | 27d | 0d | Especialista em Migração de Dados; Administrador de Banco de Dados; Testador de Software | 72h | 2,280 |
| 382 | 1.4.1.2 | Efetuar conexão entre as fonte de dados | 2d | 2020-11-02 | 2020-11-03 | 381 | 27d | 0d | Especialista em Migração de Dados; Administrador de Banco de Dados; Testador de Software | 48h | 1,520 |
| 383 | 1.4.1.3 | Efetuar rotinas de extração e gravação | 2d | 2020-11-04 | 2020-11-05 | 382 | 27d | 0d | Especialista em Migração de Dados; Testador de Software; Administrador de Banco de Dados | 48h | 1,520 |
| 384 | 1.4.1.4 | Efetuar teste e conferir resultados | 3d | 2020-11-06 | 2020-11-10 | 383 | 27d |  | Testador de Software; Especialista em Migração de Dados | 48h | 1,230 |
| 385 | 1.4.2.4.8 | **MT** | 17d | 2020-10-19 | 2020-11-10 |  | 20d |  |  | 216h | 6,550 |
| 386 | 1.4.1.1 | Extração de dados | 6d | 2020-10-19 | 2020-10-30 |  | 27d | 0d | Especialista em Migração de Dados; Administrador de Banco de Dados; Testador de Software | 72h | 2,280 |
| 387 | 1.4.1.2 | Efetuar conexão entre as fonte de dados | 2d | 2020-11-02 | 2020-11-03 | 386 | 27d | 0d | Especialista em Migração de Dados; Administrador de Banco de Dados; Testador de Software | 48h | 1,520 |
| 388 | 1.4.1.3 | Efetuar rotinas de extração e gravação | 2d | 2020-11-04 | 2020-11-05 | 387 | 27d | 0d | Especialista em Migração de Dados; Testador de Software; Administrador de Banco de Dados | 48h | 1,520 |
| 389 | 1.4.1.4 | Efetuar teste e conferir resultados | 3d | 2020-11-06 | 2020-11-10 | 388 | 27d |  | Testador de Software; Especialista em Migração de Dados | 48h | 1,230 |
| 390 | 1.4.2.4.9 | **MS** | 17d | 2020-10-19 | 2020-11-10 |  | 20d |  |  | 216h | 6,550 |
| 391 | 1.4.1.1 | Extração de dados | 6d | 2020-10-19 | 2020-10-30 |  | 27d | 0d | Especialista em Migração de Dados; Administrador de Banco de Dados; Testador de Software | 72h | 2,280 |
| 392 | 1.4.1.2 | Efetuar conexão entre as fonte de dados | 2d | 2020-11-02 | 2020-11-03 | 391 | 27d | 0d | Especialista em Migração de Dados; Administrador de Banco de Dados; Testador de Software | 48h | 1,520 |
| 393 | 1.4.1.3 | Efetuar rotinas de extração e gravação | 2d | 2020-11-04 | 2020-11-05 | 392 | 27d | 0d | Especialista em Migração de Dados; Testador de Software; Administrador de Banco de Dados | 48h | 1,520 |
| 394 | 1.4.1.4 | Efetuar teste e conferir resultados | 3d | 2020-11-06 | 2020-11-10 | 393 | 27d |  | Testador de Software; Especialista em Migração de Dados | 48h | 1,230 |
| 395 | 1.4.2.4.10 | **BA** | 14d | 2020-10-22 | 2020-11-10 |  | 20d |  |  | 216h | 6,550 |
| 396 | 1.4.1.1 | Extração de dados | 6d | 2020-10-22 | 2020-10-30 |  | 27d | 0d | Especialista em Migração de Dados; Administrador de Banco de Dados; Testador de Software | 72h | 2,280 |
| 397 | 1.4.1.2 | Efetuar conexão entre as fonte de dados | 2d | 2020-11-02 | 2020-11-03 | 396 | 27d | 0d | Especialista em Migração de Dados; Administrador de Banco de Dados; Testador de Software | 48h | 1,520 |
| 398 | 1.4.1.3 | Efetuar rotinas de extração e gravação | 2d | 2020-11-04 | 2020-11-05 | 397 | 27d | 0d | Especialista em Migração de Dados; Testador de Software; Administrador de Banco de Dados | 48h | 1,520 |
| 399 | 1.4.1.4 | Efetuar teste e conferir resultados | 3d | 2020-11-06 | 2020-11-10 | 398 | 27d |  | Testador de Software; Especialista em Migração de Dados | 48h | 1,230 |

| ID | WBS | Task | Duration | Start | Finish | Predecessors | Total slack | Free slack | Resources | Work | Cost |
| --- | --- | --- | --- | --- | --- | --- | --- | --- | --- | --- | --- |
| 400 | 1.4.2.4.11 | **PB** | 24d | 2020-10-22 | 2020-11-24 |  | 10d |  |  | 216h | 6,550 |
| 401 | 1.4.1.1 | Extração de dados | 6d | 2020-10-22 | 2020-11-13 |  | 17d | 0d | Especialista em Migração de Dados; Administrador de Banco de Dados; Testador de Software | 72h | 2,280 |
| 402 | 1.4.1.2 | Efetuar conexão entre as fonte de dados | 2d | 2020-11-16 | 2020-11-17 | 401 | 17d | 0d | Especialista em Migração de Dados; Administrador de Banco de Dados; Testador de Software | 48h | 1,520 |
| 403 | 1.4.1.3 | Efetuar rotinas de extração e gravação | 2d | 2020-11-18 | 2020-11-19 | 402 | 17d | 0d | Especialista em Migração de Dados; Testador de Software; Administrador de Banco de Dados | 48h | 1,520 |
| 404 | 1.4.1.4 | Efetuar teste e conferir resultados | 3d | 2020-11-20 | 2020-11-24 | 403 | 17d |  | Testador de Software; Especialista em Migração de Dados | 48h | 1,230 |
| 405 | 1.4.2.4.12 | **PE** | 23d | 2020-10-23 | 2020-11-24 |  | 10d |  |  | 216h | 6,550 |
| 406 | 1.4.1.1 | Extração de dados | 6d | 2020-10-23 | 2020-11-13 |  | 17d | 0d | Especialista em Migração de Dados; Administrador de Banco de Dados; Testador de Software | 72h | 2,280 |
| 407 | 1.4.1.2 | Efetuar conexão entre as fonte de dados | 2d | 2020-11-16 | 2020-11-17 | 406 | 17d | 0d | Especialista em Migração de Dados; Administrador de Banco de Dados; Testador de Software | 48h | 1,520 |
| 408 | 1.4.1.3 | Efetuar rotinas de extração e gravação | 2d | 2020-11-18 | 2020-11-19 | 407 | 17d | 0d | Especialista em Migração de Dados; Testador de Software; Administrador de Banco de Dados | 48h | 1,520 |
| 409 | 1.4.1.4 | Efetuar teste e conferir resultados | 3d | 2020-11-20 | 2020-11-24 | 408 | 17d |  | Testador de Software; Especialista em Migração de Dados | 48h | 1,230 |
| 410 | 1.4.2.4.13 | **PI** | 23d | 2020-10-23 | 2020-11-24 |  | 10d |  |  | 216h | 6,550 |
| 411 | 1.4.1.1 | Extração de dados | 6d | 2020-10-23 | 2020-11-13 |  | 17d | 0d | Especialista em Migração de Dados; Administrador de Banco de Dados; Testador de Software | 72h | 2,280 |
| 412 | 1.4.1.2 | Efetuar conexão entre as fonte de dados | 2d | 2020-11-16 | 2020-11-17 | 411 | 17d | 0d | Especialista em Migração de Dados; Administrador de Banco de Dados; Testador de Software | 48h | 1,520 |
| 413 | 1.4.1.3 | Efetuar rotinas de extração e gravação | 2d | 2020-11-18 | 2020-11-19 | 412 | 17d | 0d | Especialista em Migração de Dados; Testador de Software; Administrador de Banco de Dados | 48h | 1,520 |
| 414 | 1.4.1.4 | Efetuar teste e conferir resultados | 3d | 2020-11-20 | 2020-11-24 | 413 | 17d |  | Testador de Software; Especialista em Migração de Dados | 48h | 1,230 |
| 415 | 1.4.2.4.14 | **RN** | 23d | 2020-10-23 | 2020-11-24 |  | 10d |  |  | 216h | 6,550 |
| 416 | 1.4.1.1 | Extração de dados | 6d | 2020-10-23 | 2020-11-13 |  | 17d | 0d | Especialista em Migração de Dados; Administrador de Banco de Dados; Testador de Software | 72h | 2,280 |
| 417 | 1.4.1.2 | Efetuar conexão entre as fonte de dados | 2d | 2020-11-16 | 2020-11-17 | 416 | 17d | 0d | Especialista em Migração de Dados; Administrador de Banco de Dados; Testador de Software | 48h | 1,520 |
| 418 | 1.4.1.3 | Efetuar rotinas de extração e gravação | 2d | 2020-11-18 | 2020-11-19 | 417 | 17d | 0d | Especialista em Migração de Dados; Testador de Software; Administrador de Banco de Dados | 48h | 1,520 |
| 419 | 1.4.1.4 | Efetuar teste e conferir resultados | 3d | 2020-11-20 | 2020-11-24 | 418 | 17d |  | Testador de Software; Especialista em Migração de Dados | 48h | 1,230 |
| 420 | 1.4.2.4.15 | **RO** | 23d | 2020-10-23 | 2020-11-24 |  | 10d |  |  | 216h | 6,550 |
| 421 | 1.4.1.1 | Extração de dados | 6d | 2020-10-23 | 2020-11-13 |  | 17d | 0d | Especialista em Migração de Dados; Administrador de Banco de Dados; Testador de Software | 72h | 2,280 |
| 422 | 1.4.1.2 | Efetuar conexão entre as fonte de dados | 2d | 2020-11-16 | 2020-11-17 | 421 | 17d | 0d | Especialista em Migração de Dados; Administrador de Banco de Dados; Testador de Software | 48h | 1,520 |
| 423 | 1.4.1.3 | Efetuar rotinas de extração e gravação | 2d | 2020-11-18 | 2020-11-19 | 422 | 17d | 0d | Especialista em Migração de Dados; Testador de Software; Administrador de Banco de Dados | 48h | 1,520 |
| 424 | 1.4.1.4 | Efetuar teste e conferir resultados | 3d | 2020-11-20 | 2020-11-24 | 423 | 17d |  | Testador de Software; Especialista em Migração de Dados | 48h | 1,230 |

| ID | WBS | Task | Duration | Start | Finish | Predecessors | Total slack | Resources | Work | Cost |
| --- | --- | --- | --- | --- | --- | --- | --- | --- | --- | --- |
| 425 | 1.4.2.4.16 | **RR** | 33d | 2020-10-23 | 2020-12-08 |  | 0d |  | 216h | 6,550 |
| 426 | 1.4.1.1 | Extração de dados | 6d | 2020-10-23 | 2020-11-27 |  | 0d | Especialista em Migração de Dados; Administrador de Banco de Dados; Testador de Software | 72h | 2,280 |
| 427 | 1.4.1.2 | Efetuar conexão entre as fonte de dados | 2d | 2020-11-30 | 2020-12-01 | 426 | 0d | Especialista em Migração de Dados; Administrador de Banco de Dados; Testador de Software | 48h | 1,520 |
| 428 | 1.4.1.3 | Efetuar rotinas de extração e gravação | 2d | 2020-12-02 | 2020-12-03 | 427 | 0d | Especialista em Migração de Dados; Testador de Software; Administrador de Banco de Dados | 48h | 1,520 |
| 429 | 1.4.1.4 | Efetuar teste e conferir resultados | 3d | 2020-12-04 | 2020-12-08 | 428 | 0d | Testador de Software; Especialista em Migração de Dados | 48h | 1,230 |
| 430 | 1.4.2.4.17 | **SE** | 31d | 2020-10-27 | 2020-12-08 |  | 0d |  | 216h | 6,550 |
| 431 | 1.4.1.1 | Extração de dados | 6d | 2020-10-27 | 2020-11-27 |  | 0d | Especialista em Migração de Dados; Administrador de Banco de Dados; Testador de Software | 72h | 2,280 |
| 432 | 1.4.1.2 | Efetuar conexão entre as fonte de dados | 2d | 2020-11-30 | 2020-12-01 | 431 | 0d | Especialista em Migração de Dados; Administrador de Banco de Dados; Testador de Software | 48h | 1,520 |
| 433 | 1.4.1.3 | Efetuar rotinas de extração e gravação | 2d | 2020-12-02 | 2020-12-03 | 432 | 0d | Especialista em Migração de Dados; Testador de Software; Administrador de Banco de Dados | 48h | 1,520 |
| 434 | 1.4.1.4 | Efetuar teste e conferir resultados | 3d | 2020-12-04 | 2020-12-08 | 433 | 0d | Testador de Software; Especialista em Migração de Dados | 48h | 1,230 |
| 435 | 1.4.2.4.18 | **TO** | 31d | 2020-10-27 | 2020-12-08 |  | 0d |  | 216h | 6,550 |
| 436 | 1.4.1.1 | Extração de dados | 6d | 2020-10-27 | 2020-11-27 |  | 0d | Especialista em Migração de Dados; Administrador de Banco de Dados; Testador de Software | 72h | 2,280 |
| 437 | 1.4.1.2 | Efetuar conexão entre as fonte de dados | 2d | 2020-11-30 | 2020-12-01 | 436 | 0d | Especialista em Migração de Dados; Administrador de Banco de Dados; Testador de Software | 48h | 1,520 |
| 438 | 1.4.1.3 | Efetuar rotinas de extração e gravação | 2d | 2020-12-02 | 2020-12-03 | 437 | 0d | Especialista em Migração de Dados; Testador de Software; Administrador de Banco de Dados | 48h | 1,520 |
| 439 | 1.4.1.4 | Efetuar teste e conferir resultados | 3d | 2020-12-04 | 2020-12-08 | 438 | 0d | Testador de Software; Especialista em Migração de Dados | 48h | 1,230 |
| 440 | 1.5 | **Fase de treinamento** | 10d | 2020-12-09 | 2020-12-22 | 299 | 0d |  | 328h | 34,560 |
| 441 | 1.5.1 | Amazonas(AC,AM,PA,RO,RR,TO) | 5d | 2020-12-09 | 2020-12-15 |  | 12d | Consultor de Suporte Técnico; Passagem aérea [0.1%]; Gastos Gerais [0.1%] | 40h | 7,800 |
| 442 | 1.5.2 | Bahia(AL,BA,CE,MA,PA,PE,PI,RN,SE) | 10d | 2020-12-09 | 2020-12-22 |  | 0d | Consultor de Suporte Técnico; Passagem aérea [0.1%]; Gastos Gerais [0.1%] | 80h | 1,600 |
| 443 | 1.5.3 | Distrito Federal(DF,GO,MT,MS,Cofecon) | 5d | 2020-12-09 | 2020-12-15 |  | 12d | Consultor de Suporte Técnico; Passagem aérea [0.1%]; Gastos Gerais [0.1%] | 40h | 800 |
| 444 | 1.5.4 | Rio de Janeiro(ES,MG,RJ) | 5d | 2020-12-09 | 2020-12-15 |  | 12d | Consultor de Suporte Técnico; Passagem aérea [0.1%]; Gastos Gerais [0.1%] | 40h | 800 |
| 445 | 1.5.5 | São Paulo(SP) | 5d | 2020-12-09 | 2020-12-15 |  | 12d | Consultor de Suporte Técnico; Passagem aérea [0.1%]; Gastos Gerais [0.1%] | 40h | 800 |
| 446 | 1.5.6 | Paraná(PR,RS,SC) | 5d | 2020-12-16 | 2020-12-22 |  | 0d | Consultor de Suporte Técnico; Passagem aérea [0.1%]; Gastos Gerais [0.1%] | 40h | 7,800 |
| 447 | 1.5.7 | Cursos extras | 5d | 2020-12-16 | 2020-12-22 |  | 0d | Consultor de Suporte Técnico; Passagem aérea [0.1%]; Gastos Gerais [0.1%] | 40h | 7,800 |
| 448 | 1.5.8 | Criação de manuais e vídeos aulas | 1d | 2020-12-16 | 2020-12-22 |  | 0d | Consultor de Suporte Técnico; Passagem aérea [0.1%]; Gastos Gerais [0.1%] | 8h | 7,160 |
